# 开发计划

Schedule from MS Project, 2014-06-26 to 2014-07-25.
zf

## Calendars

- 标准: Mon-Fri 08:00-12:00, 13:00-17:00; Sat-Sun off.

## Resources

| Resource |
| --- |
| 曾凡 |
| 闫威 |
| 闫威和曾凡 |

## Schedule

| ID | WBS | Task | Type | Duration | Start | Finish | Total slack | Constraint | Resources | Work |
| --- | --- | --- | --- | --- | --- | --- | --- | --- | --- | --- |
| 1 | 1 | **[SH01]智能家居APP** |  | 22d | 2014-06-26 08:00 | 2014-07-25 17:00 |  |  |  | 857h |
| 2 | 1.1 | **[SH01_01]设备管理** |  | 6d | 2014-06-26 08:00 | 2014-07-03 17:00 |  |  | 曾凡 | 96h |
| 3 | 1.1.1 | **[SH01_01_01]配置设备** |  | 4d | 2014-06-26 08:00 | 2014-07-01 17:00 |  |  |  | 24h |
| 4 | 1.1.1.1 | [SH01_01_01_02]发现设备 |  | 8h | 2014-06-27 08:00 | 2014-06-27 17:00 | 20d | start no earlier than 2014-06-27 08:00 | 曾凡 | 8h |
| 5 | 1.1.1.2 | [SH01_01_01_03]查看已发现设备 |  | 8h | 2014-06-30 08:00 | 2014-06-30 17:00 | 19d | start no earlier than 2014-06-30 08:00 | 曾凡 | 8h |
| 6 | 1.1.1.3 | [SH01_01_01_04]添加/删除设备 |  | 4h | 2014-06-30 08:00 | 2014-06-30 12:00 | 19.5d | start no earlier than 2014-06-30 08:00 | 曾凡 | 4h |
| 7 | 1.1.1.4 | [SH01_01_01_04]修改/查看设备 |  | 4h | 2014-07-01 08:00 | 2014-07-01 12:00 | 18.5d | start no earlier than 2014-07-01 08:00 | 曾凡 | 4h |
| 8 | 1.1.2 | **[SH01_01_02]控制设备** |  | 3d | 2014-07-01 08:00 | 2014-07-03 17:00 |  |  |  | 24h |
| 9 | 1.1.2.1 | [SH01_01_02_01]App控制设备开关 |  | 24h | 2014-07-01 08:00 | 2014-07-03 17:00 | 16d | finish no earlier than 2014-07-03 17:00 | 曾凡 | 24h |
| 10 | 1.2 | **[SH01_02]数据管理** |  | 16d | 2014-07-03 08:00 | 2014-07-24 17:00 |  |  | 曾凡; 闫威 | 561h |
| 11 | 1.2.1 | **[SH01_02_01]查看历史信息** |  | 4d | 2014-07-03 08:00 | 2014-07-08 17:00 |  |  | 曾凡 | 64h |
| 12 | 1.2.1.1 | [SH01_02_01_01]查看历史操作信息 |  | 16h | 2014-07-03 08:00 | 2014-07-04 17:00 | 15d | start no earlier than 2014-07-03 08:00 | 曾凡 | 16h |
| 13 | 1.2.1.2 | [SH01_02_01_02]查看历史报警信息 |  | 8h | 2014-07-07 08:00 | 2014-07-07 17:00 | 14d | start no earlier than 2014-07-07 08:00 | 曾凡 | 8h |
| 14 | 1.2.1.3 | [SH01_02_01_03]查看历史明细信息 |  | 8h | 2014-07-08 08:00 | 2014-07-08 17:00 | 13d | start no earlier than 2014-07-08 08:00 | 曾凡 | 8h |
| 15 | 1.2.2 | **[SH01_02_02]更新显示传感器明细** |  | 12d | 2014-07-02 08:00 | 2014-07-17 17:00 |  |  | 闫威 | 185h |
| 16 | 1.2.2.1 | [SH01_02_02_01]手动更新 |  | 88h | 2014-07-02 08:00 | 2014-07-16 17:00 | 7d | start no earlier than 2014-07-02 08:00 | 闫威 | 88h |
| 17 | 1.2.2.2 | [SH01_02_02_02]自动更新 |  | 1h | 2014-07-16 08:00 | 2014-07-16 09:00 | 7.88d | start no earlier than 2014-07-16 08:00 | 闫威 | 1h |
| 18 | 1.2.3 | [SH01_02_03]查看汉威知识 |  | 1d | 2014-07-03 08:00 | 2014-07-03 17:00 | 16d | finish no earlier than 2014-07-03 17:00 | 曾凡 | 8h |
| 19 | 1.2.4 | **[SH01_02_04]分享（微博、微信）** |  | 3d | 2014-06-30 08:00 | 2014-07-02 17:00 |  |  | 曾凡 | 48h |
| 20 | 1.2.4.1 | [SH01_02_04_01] 分享选中的历史 |  | 8h | 2014-06-30 08:00 | 2014-06-30 17:00 | 2d |  | 曾凡 | 8h |
| 21 | 1.2.4.2 | [SH01_02_04_02] 分享选中的知识 |  | 8h | 2014-07-01 08:00 | 2014-07-01 17:00 | 18d | start no earlier than 2014-07-01 08:00 | 曾凡 | 8h |
| 22 | 1.2.4.3 | [SH01_02_04_03] 分享选中的传感器 |  | 8h | 2014-07-02 08:00 | 2014-07-02 17:00 | 17d | start no earlier than 2014-07-02 08:00 | 曾凡 | 8h |
| 23 | 1.3 | **[SH01_03]用户管理** |  | 5d | 2014-06-26 08:00 | 2014-07-02 17:00 |  |  | 闫威 | 80h |
| 24 | 1.3.1 | **[SH01_03_02]用户认证** |  | 5d | 2014-06-26 08:00 | 2014-07-02 17:00 |  |  |  | 40h |
| 25 | 1.3.1.1 | [SH01_03_02_01] 新建账号 |  | 16h | 2014-06-26 08:00 | 2014-06-27 17:00 | 20d | finish no earlier than 2014-06-27 17:00 | 闫威 | 16h |
| 26 | 1.3.1.2 | [SH01_03_02_02] 忘记密码 |  | 8h | 2014-06-30 08:00 | 2014-06-30 17:00 | 19d | start no earlier than 2014-06-30 08:00 | 闫威 | 8h |
| 27 | 1.3.1.3 | [SH01_03_02_03] 修改密码 |  | 8h | 2014-07-01 08:00 | 2014-07-01 17:00 | 18d | start no earlier than 2014-07-01 08:00 | 闫威 | 8h |
| 28 | 1.3.1.4 | [SH01_03_02_04] 账号登陆 | manual | 1d | 2014-07-02 08:00 | 2014-07-02 17:00 |  |  | 闫威 | 8h |

Notes:
- 4: 功能名称：发现设备 / 功能描述：自动发现局域网内的智能设备 / 使用频率：低，第一次登陆App、第一次连接终端设备或用户非常态调用 / 使用人员：App登录人 / 限制条件：需要连接局域网，用户登录 / 输入输出：输入：当前手机WIFI的SSID密码 / 输出：局域网内设备的连接信息 / 提供者：曾凡 / 优先级：高：（一个关键的需求）属于系统（产品）主要功能且当前版本中必须实现的。 / 获取时间：2014-05-30 / 其他：
- 5: 功能名称：查看已发现设备 / 功能描述：发现设备后可以查看已发现的设备，以列表或者分散的图片显示 / 使用频率：低，第一次登陆App、第一次连接终端设备或用户非常态调用 / 使用人员：App登录人 / 限制条件：需要连接局域网，用户登录 / 输入输出：输入：局域网内设备的连接信息 / 输出：设备列表 / 提供者：曾凡 / 优先级：高：（一个关键的需求）属于系统（产品）主要功能且当前版本中必须实现的。 / 获取时间：2014-05-30 / 其他：
- 6: 功能名称：查看已发现设备 / 功能描述：用户添加已发现的设备，同时也可以删除已添加的设备，需要联网激活设备和接受服务端应答确认信息 / 使用频率：低，第一次登陆App、第一次连接终端设备或用户非常态调用 / 使用人员：App登录人 / 限制条件：需要连接互联网，用户登录 / 输入输出：输入：设备列表 / 输出：服务器返回成功/失败应答和最新设备列表 / 提供者：曾凡 / 优先级：高：（一个关键的需求）属于系统（产品）主要功能且当前版本中必须实现的。 / 获取时间：2014-05-30 / 其他：
- 7: 功能名称：修改/查看设备信息 / 功能描述：修改或查看已添加的设备信息，例如：用户设置的设备别名（取而代之默认的设备型号）、设备的使用场景，激活时间等 / 使用频率：低，第一次登陆App、第一次连接终端设备或用户非常态调用 / 使用人员：App登录人 / 限制条件：需要连接互联网，用户登录 / 输入输出：输入：设备列表 / 输出：服务器返回成功/失败应答和最新设备列表 / 提供者：曾凡 / 优先级：高：（一个关键的需求）属于系统（产品）主要功能且当前版本中必须实现的。 / 获取时间：2014-05-30 / 其他：
- 9: 功能名称：控制设备开关 / 功能描述：可以通过服务器远程控制设备的开关，服务器端自动记录操作 / 使用频率：中，用户非常态调用或 / 使用人员：App登录人 / 限制条件：需要连接互联网，用户登录 / 输入输出：输入：当前设备唯一标识 / 输出：服务器返回成功/失败应答 / 提供者：曾凡 / 优先级：高：（一个关键的需求）属于系统（产品）主要功能且当前版本中必须实现的 / 获取时间：2014-05-30 / 其他：
- 12: 功能名称：查看历史操作信息 / 功能描述：用户可以查看历史设备开关操作信息 / 使用频率：中，用户非常态调用 / 使用人员：App登录人 / 限制条件：需要连接互联网，用户登录 / 输入输出：输入：当前设备唯一标识 / 输出：服务器返回成功/失败应答，历史操作列表 / 提供者：曾凡 / 优先级：高：（一个关键的需求）属于系统（产品）主要功能且当前版本中必须实现的 / 获取时间：2014-05-30 / 其他：
- 13: 功能名称：控制设备开关 / 功能描述：用户可以查看设备的历史报警信息 / 使用频率：高，主页显示 / 使用人员：App登录人 / 限制条件：需要连接互联网，用户登录 / 输入输出：输入：当前设备唯一标识 / 输出：服务器返回成功/失败应答，历史报警列表 / 提供者：曾凡 / 优先级：高：（一个关键的需求）属于系统（产品）主要功能且当前版本中必须实现的 / 获取时间：2014-05-30 / 其他：
- 14: 功能名称：查看历史明细信息 / 功能描述：用户可以查看设备的历史明细信息 / 使用频率：高，主页显示 / 使用人员：App登录人 / 限制条件：需要连接互联网，用户登录 / 输入输出：输入：当前设备唯一标识 / 输出：服务器返回成功/失败应答，历史明细列表 / 提供者：曾凡 / 优先级：高：（一个关键的需求）属于系统（产品）主要功能且当前版本中必须实现的 / 获取时间：2014-05-30 / 其他：
- 16: 功能名称：手动更新 / 功能描述：手动更新当前传感器的信息 / 使用频率：高，首页用户点击 / 使用人员：App登录人 / 限制条件：需要连接互联网，用户登录 / 输入输出：输入：用户点击 / 输出：服务器返回成功/失败应答，最新终端设备明细信息 / 提供者：曾凡 / 优先级：高：（一个关键的需求）属于系统（产品）主要功能且当前版本中必须实现的 / 获取时间：2014-05-30 / 其他：
- 17: 功能名称：自动更新 / 功能描述：登录后自动更新最新的传感器信息 / 使用频率：高，登录自动执行 / 使用人员：App登录人 / 限制条件：需要连接互联网，用户登录 / 输入输出：输入：当前设备唯一标识 / 输出：服务器返回成功/失败应答，最新终端设备明细信息 / 提供者：曾凡 / 优先级：高：（一个关键的需求）属于系统（产品）主要功能且当前版本中必须实现的 / 获取时间：2014-05-30 / 其他：
- 20: 功能名称：分享选中的历史 / 功能描述：分享选中的历史页面的图片信息 / 使用频率：低，基本没人会去分享 / 使用人员：App登录人 / 限制条件：需要连接互联网，用户登录 / 输入输出：输入：分享请求 / 输出：请求App的应答 / 提供者：曾凡 / 优先级：低：（功能或质量上的增强）如果资源允许的话，实现这些需求会使系统（产品）更完美。 / 获取时间：2014-05-30 / 其他：
- 21: 功能名称：分享选中的知识 / 功能描述：分享选中知识的文字和图片信息 / 使用频率：低，基本没人会去分享 / 使用人员：App登录人 / 限制条件：需要连接互联网，用户登录 / 输入输出：输入：分享请求 / 输出：请求App的应答 / 提供者：曾凡 / 优先级：低：（功能或质量上的增强）如果资源允许的话，实现这些需求会使系统（产品）更完美。 / 获取时间：2014-05-30 / 其他：
- 22: 功能名称：分享选中的传感器 / 功能描述：分享本地的传感器信息 / 使用频率：低，基本没人会去分享 / 使用人员：App登录人 / 限制条件：需要连接互联网，用户登录 / 输入输出：输入：分享请求 / 输出：请求App的应答 / 提供者：曾凡 / 优先级：低：（功能或质量上的增强）如果资源允许的话，实现这些需求会使系统（产品）更完美。 / 获取时间：2014-05-30 / 其他：
- 25: 功能名称：新建账号 / 功能描述：连接服务端创建账号，建议用户名用邮箱 / 使用频率：低，第一次登录时创建 / 使用人员：App登录人 / 限制条件：需要连接互联网，用户登录 / 输入输出：输入：用户信息 / 输出：服务器返回成功/失败应答 / 提供者：曾凡 / 优先级：高：（一个关键的需求）属于系统（产品）主要功能且当前版本中必须实现的 / 获取时间：2014-05-30 / 其他：
- 26: 功能名称：忘记密码 / 功能描述：忘记密码需要登录服务端通过发送邮箱或者短信验证后重置 / 使用频率：中，长时间不登出App遗忘密码 / 使用人员：App登录人 / 限制条件：需要连接互联网，用户登录 / 输入输出：输入：用户名 / 输出：邮件或密码验证码或地址 / 提供者：曾凡 / 优先级：高：（一个关键的需求）属于系统（产品）主要功能且当前版本中必须实现的 / 获取时间：2014-05-30 / 其他：
- 27: 功能名称：修改密码 / 功能描述：在本地修改密码，修改密码后设置App的登录上下文 / 使用频率：低，有安全意识的人不多 / 使用人员：App登录人 / 限制条件：需要连接互联网，用户登录 / 输入输出：输入：老密码，新密码 / 输出：服务器返回成功/失败应答 / 提供者：曾凡 / 优先级：高：（一个关键的需求）属于系统（产品）主要功能且当前版本中必须实现的 / 获取时间：2014-05-30 / 其他：

| ID | WBS | Task | Duration | Start | Finish | Predecessors | Total slack | Constraint | Resources | Work |
| --- | --- | --- | --- | --- | --- | --- | --- | --- | --- | --- |
| 29 | 1.4 | **[SH01_05]软件功能** | 5d | 2014-07-21 08:00 | 2014-07-25 17:00 |  |  |  | 曾凡; 闫威 | 120h |
| 30 | 1.4.1 | **[SH01_05_01]个性化** | 2d | 2014-07-21 08:00 | 2014-07-22 17:00 |  |  |  |  | 16h |
| 31 | 1.4.1.1 | [SH01_05_01_01] 主题 | 8h | 2014-07-21 08:00 | 2014-07-21 17:00 |  | 0d |  | 曾凡 | 8h |
| 32 | 1.4.1.2 | [SH01_05_01_02] 留言板 | 8h | 2014-07-22 08:00 | 2014-07-22 17:00 | 31 | 0d |  | 曾凡 | 8h |
| 33 | 1.4.2 | **[SH01_05_02]通用功能** | 3d | 2014-07-23 08:00 | 2014-07-25 17:00 |  |  |  |  | 24h |
| 34 | 1.4.2.1 | [SH01_05_02_01] 关于 | 4h | 2014-07-23 08:00 | 2014-07-23 12:00 |  | 2.5d | start no earlier than 2014-07-23 08:00 | 闫威 | 4h |
| 35 | 1.4.2.2 | [SH01_05_02_02] 帮助 | 4h | 2014-07-23 08:00 | 2014-07-23 12:00 |  | 2.5d | start no earlier than 2014-07-23 08:00 | 闫威 | 4h |
| 36 | 1.4.2.3 | [SH01_05_02_03] 开发者名单 | 8h | 2014-07-24 08:00 | 2014-07-24 17:00 |  | 0d | start no earlier than 2014-07-24 08:00 | 曾凡 | 8h |
| 37 | 1.4.2.4 | [SH01_05_02_04] 退出 | 8h | 2014-07-25 08:00 | 2014-07-25 17:00 | 36 | 0d |  | 曾凡 | 8h |

Notes:
- 31: 功能名称：主题 / 功能描述：更换软件的主题选择，可以从服务端下载主题 / 使用频率：低，用户换一次就完了 / 使用人员：App登录人 / 限制条件：需要连接互联网，用户登录 / 输入输出：输入：选择的主题编号 / 输出：服务器返回成功/失败应答 / 提供者：曾凡 / 优先级：中：（支持必要的功能）最终所需要的，但如果有必要的话，可以延迟到下一个版本。 / 获取时间：2014-05-30 / 其他：
- 32: 功能名称：留言板 / 功能描述：显示服务端提供的web留言反馈页面，可以根据当前登录用户去自动验证登录服务器 / 使用频率：低，基本上没人用 / 使用人员：App登录人 / 限制条件：需要连接互联网，用户登录 / 输入输出：输入：用户留言 / 输出：服务端页面更新 / 提供者：曾凡 / 优先级：低：（功能或质量上的增强）如果资源允许的话，实现这些需求会使系统（产品）更完美 / 获取时间：2014-05-30 / 其他：
- 34: 功能名称：关于 / 功能描述：显示软件全名、公司、版本号等信息 / 使用频率：中，查看的人不多 / 使用人员：App登录人 / 限制条件：用户登录 / 输入输出：输入：用户点击 / 输出：关于信息 / 提供者：曾凡 / 优先级：中：（支持必要的功能）最终所需要的，但如果有必要的话，可以延迟到下一个版本。 / 获取时间：2014-05-30 / 其他：
- 35: 功能名称：帮助 / 功能描述：显示帮助信息 / 使用频率：中，对仪表不熟悉的人可以选 / 使用人员：App登录人 / 限制条件：/ 输入输出：输入：用户点击 / 输出：帮助列表/图片 / 提供者：曾凡 / 优先级：中：（支持必要的功能）最终所需要的，但如果有必要的话，可以延迟到下一个版本。 / 获取时间：2014-05-30 / 其他：
- 36: 功能名称：开发者名单 / 功能描述：显示开发者名单 / 使用频率：低，用户换一次就完了 / 使用人员：App登录人 / 限制条件：/ 输入输出：输入：用户点击 / 输出：开发者名单列表/图片 / 提供者：曾凡 / 优先级：中：（支持必要的功能）最终所需要的，但如果有必要的话，可以延迟到下一个版本。 / 获取时间：2014-05-30 / 其他：
- 37: 功能名称：退出 / 功能描述：退出当前的登录账户并返回登录页面 / 使用频率：低，基本没人去退出 / 使用人员：App登录人 / 限制条件：用户登录 / 输入输出：输入：用户点击 / 输出：跳转主页面，退出登录 / 提供者：曾凡 / 优先级：高：（一个关键的需求）属于系统（产品）主要功能且当前版本中必须实现的。 / 获取时间：2014-05-30 / 其他：
