Schedule from MS Project, 2014-05-20 to 2014-08-29.

## Calendars

- 标准: Mon-Fri 08:00-12:00, 13:00-17:00; Sat-Sun off.

## Resources

| Resource |
| --- |
| 闫威 |
| 杜群星 |
| 曾凡 |
| 王贺喜 |
| 郭伟明 |
| 苌帅 |
| 闫威和曾凡 |
| 李品留 |
| 李留品 |

## Schedule

| ID | WBS | Task | Type | Duration | Start | Finish | Predecessors | Total slack | Free slack | Constraint | Resources | Work |
| --- | --- | --- | --- | --- | --- | --- | --- | --- | --- | --- | --- | --- |
| 1 | 1 | **需求设计** |  | 19.06d | 2014-05-20 | 2014-06-13 |  |  |  |  |  | 223.5h |
| 2 | 1.1 | 需求调研 |  | 9d | 2014-05-20 | 2014-05-30 |  | 4d |  |  | 闫威; 曾凡 | 144h |
| 3 | 1.2 | 编写用户需求规格说明书 |  | 6.94d | 2014-06-02 | 2014-06-10 |  | 58d |  | finish no earlier than 2014-06-10 | 曾凡 | 55.5h |
| 4 | 1.3 | 需求原型 | manual | 2d | 2014-06-11 | 2014-06-13 |  |  |  |  | 曾凡 | 16h |
| 5 | 1.4 | 接口设计 | manual | 1d | 2014-06-12 | 2014-06-13 |  |  |  |  | 曾凡 | 8h |
| 6 | 5 | **系统设计** |  | 7d | 2014-06-17 | 2014-06-25 |  |  |  |  |  | 117.5h |
| 7 | 2.1 | 概要设计说明书 |  | 1d | 2014-06-17 | 2014-06-17 |  | 53d |  | finish no earlier than 2014-06-17 | 曾凡 | 8h |
| 8 | 2.2 | 用户界面原型设计 |  | 0.94d | 2014-06-18 | 2014-06-18 |  | 52d |  | finish no earlier than 2014-06-18 | 王贺喜; 曾凡 | 15h |
| 9 | 2.3 | 数据库设计 |  | 2.94d | 2014-06-19 | 2014-06-23 |  | 49d |  | finish no earlier than 2014-06-23 | 曾凡; 王贺喜; 闫威 | 70.5h |
| 10 | 2.4 | 详细设计 |  | 1d | 2014-06-24 | 2014-06-25 |  | -7.06d | 0d | start no earlier than 2014-06-24 | 王贺喜; 闫威; 曾凡 | 24h |
| 11 | 3 | **开发** |  | 45d | 2014-06-23 | 2014-08-22 | 10 |  |  |  |  | 431.5h |
| 12 | 3.1 | **智能家居业务系统开发** |  | 45d | 2014-06-23 | 2014-08-22 |  |  |  |  |  | 119.5h |
| 13 | 3.1.1 | **[SH02]服务端系统功能设计** |  | 45d | 2014-06-23 | 2014-08-22 |  |  |  |  |  |  |
| 14 | 3.1.1.1 | **[SH02_01]操作权限** |  | 3d | 2014-06-23 | 2014-06-25 |  |  |  |  |  |  |
| 15 | 3.1.1.1.1 | [SH02_01_01]分配权限 |  | 16h | 2014-06-23 | 2014-06-24 |  | 1d |  |  |  |  |
| 16 | 3.1.1.1.2 | [SH02_01_02]登录、操作日志 |  | 16h | 2014-06-17 | 2014-06-18 |  | 52d |  | finish no earlier than 2014-06-18 |  |  |
| 17 | 3.1.1.2 | **[SH02_02]个人基本信息** |  | 2d | 2014-06-26 | 2014-06-27 |  |  |  |  |  |  |
| 18 | 3.1.1.2.1 | [SH02_02_01]客户基本信息 | milestone | 0h | 2014-06-26 | 2014-06-26 |  | 2d |  |  |  |  |
| 19 | 3.1.1.2.2 | [SH02_02_02]信息操作记录 | milestone | 0h | 2014-06-26 | 2014-06-26 |  | 2d |  |  |  |  |
| 20 | 3.1.1.3 | **[SH02_03]设备基本信息** |  | 5d | 2014-06-30 | 2014-07-04 |  |  |  |  |  |  |
| 21 | 3.1.1.3.1 | [SH02_03_01]设备注册 | milestone | 0h | 2014-06-30 | 2014-06-30 |  | 5d |  |  |  |  |
| 22 | 3.1.1.3.2 | [SH02_03_02]设备基本信息 | milestone | 0h | 2014-06-30 | 2014-06-30 |  | 5d |  |  |  |  |
| 23 | 3.1.1.3.3 | [SH02_03_03]设备状态 | milestone | 0h | 2014-06-30 | 2014-06-30 |  | 5d |  |  |  |  |
| 24 | 3.1.1.4 | **[SH02_04]数据信息采集存储** |  | 5d | 2014-07-07 | 2014-07-11 |  |  |  |  |  |  |
| 25 | 3.1.1.4.1 | [SH02_04_01]设备监控 | milestone | 0h | 2014-07-07 | 2014-07-07 |  | 5d |  |  |  |  |
| 26 | 3.1.1.4.2 | [SH02_04_02]数据采集 | milestone | 0h | 2014-07-07 | 2014-07-07 |  | 5d |  |  |  |  |
| 27 | 3.1.1.4.3 | [SH02_04_02]数据存储 | milestone | 0h | 2014-07-07 | 2014-07-07 |  | 5d |  |  |  |  |

Notes:
- 6: 曽凡负责移动端的概要设计 / 杜群星负责整体概要设计包括整合服务端和移动端的概要设计
- 15: 功能名称：分配权限 / 功能描述：给用户分配权限 / 使用频率：高，直接决定用户管理的内容 / 使用人员：汉威 / 限制条件：需要连接互联网，用户登录 / 输入输出：输入：用户类型、操作范围 / 输出：确定用户合法性、满足用户操作 / 提供者：闫威 / 优先级：高 / 获取时间：2014-06-09 / 其他：
- 16: 功能名称：登录、操作日志 / 功能描述：合法的人员可以登录并进行相应的操作并进行记录 / 使用频率：高，对使用者的监控 / 使用人员：汉威/客户 / 限制条件：需要连接互联网，合法用户登录 / 输入输出：输入：操作内容和时间 / 输出：添加记录表备案 / 提供者：闫威 / 优先级：高 / 获取时间：2014-06-09 / 其他：
- 18: 功能名称：客户基本信息 / 功能描述：查看客户的个人信息 / 使用频率：中，注册时填写完整，查看信息频率中，修改频率低 / 使用人员：客户和汉威 / 限制条件：需要连接互联网，用户登录 / 输入输出：输入：姓名、详细地址（省）、联系方式 / 输出：注册成功 / 提供者：闫威 / 优先级：高：联系到移动端注册信息 / 获取时间：2014-06-09 / 其他：
- 19: 功能名称：操作记录 / 功能描述：记录登入用户的操作内容和时间 / 使用频率：低，可在最后过程实现 / 使用人员：客户和汉威 / 限制条件：需要连接互联网，用户登录 / 输入输出：输入：操作内容、用户id、设备id、时间 / 输出：记录成功 / 提供者：闫威 / 优先级：中，操作功能实现后 / 获取时间：2014-06-09 / 其他：
- 21: 功能名称：设备注册 / 功能描述：APP注册设备信息 / 使用频率：高 / 使用人员：客户 / 限制条件：需要连接互联网、APP，用户登录 / 输入输出：输入：设备信息 / 输出：注册结果 / 提供者：闫威 / 优先级：高 / 获取时间：2014-06-09 / 其他：
- 22: 功能名称：基本信息 / 功能描述：查看该设备注册的日期等和功能 / 使用频率：高 / 使用人员：客户/汉威 / 限制条件：需要连接互联网，用户登录 / 输入输出：输入：设备id / 输出：详细信息 / 提供者：闫威 / 优先级：高 / 获取时间：2014-06-09 / 其他：
- 23: 功能名称：运行状态 / 功能描述：是否托管 运行状况（正常、未连接） 维修记录、售后服务、检修日期 / 使用频率：高 / 使用人员：客户/汉威 / 限制条件：需要连接互联网和设备，用户登录 / 输入输出：输入：设备id / 输出：详细信息 / 提供者：闫威 / 优先级：高 / 获取时间：2014-06-09 / 其他：
- 25: 功能名称：设备监控 / 功能描述：监控设备当前的数据值及状态 / 使用频率：高，核心功能，不停记录设备上传的数据并不断更新 / 使用人员：客户和汉威 / 限制条件：需要连接互联网，用户登录 / 输入输出：输入：设备状体、用户id、设备id、时间 / 输出：记录成功 / 提供者：闫威 / 优先级：高 / 获取时间：2014-06-09 / 其他：发生报警时，要将数据保存到报警表中
- 26: 功能名称：采集 / 功能描述：对原始数据的解析 / 使用频率：高，核心功能，不停解析原始数据 / 使用人员：客户和汉威 / 限制条件：需要连接互联网，用户登录 / 输入输出：输入：设备状体、用户id、设备id、时间 / 输出：记录成功 / 提供者：闫威 / 优先级：高，判断数据解析正常 / 获取时间：2014-06-09 / 其他：发生报警时，要将数据保存到报警表中
- 27: 功能名称：存储 / 功能描述：保存实时数据信息 / 使用频率：高，核心功能，不停记录设备上传的数据并不断更新 / 使用人员：客户和汉威 / 限制条件：需要连接互联网，用户登录 / 输入输出：输入：设备状体、用户id、设备id、时间 / 输出：记录成功 / 提供者：闫威 / 优先级：高，方便APP调用 / 获取时间：2014-06-09 / 其他：发生报警时，要将数据保存到报警表中

| ID | WBS | Task | Type | Duration | Start | Finish | Total slack | Constraint | Resources | Work |
| --- | --- | --- | --- | --- | --- | --- | --- | --- | --- | --- |
| 28 | 3.1.1.5 | **[SH02_05]操作信息（委托汉威云）** |  | 5d | 2014-07-14 | 2014-07-18 |  |  |  |  |
| 29 | 3.1.1.5.1 | [SH02_05_01]操作信息 | milestone | 0h | 2014-07-14 | 2014-07-14 | 5d |  |  |  |
| 30 | 3.1.1.5.2 | [SH02_05_02]操作信息（自动） | milestone | 0h | 2014-07-14 | 2014-07-14 | 5d |  |  |  |
| 31 | 3.1.1.6 | **[SH02_06]报警信息** |  | 2d | 2014-07-21 | 2014-07-22 |  |  |  |  |
| 32 | 3.1.1.6.1 | [SH02_06_01]报警信息 | milestone | 0h | 2014-07-21 | 2014-07-21 | 2d |  |  |  |
| 33 | 3.1.1.7 | **[SH02_07]数据监控与分析** |  | 3d | 2014-07-23 | 2014-07-25 |  |  |  |  |
| 34 | 3.1.1.7.1 | [SH02_07_01]报表 | milestone | 0h | 2014-07-23 | 2014-07-23 | 3d |  |  |  |
| 35 | 3.1.1.7.2 | [SH02_07_02]分析 | milestone | 0h | 2014-07-23 | 2014-07-23 | 3d |  |  |  |
| 36 | 3.1.1.8 | **[SH02_08]健康知识普及** |  | 2d | 2014-07-28 | 2014-07-29 |  |  |  |  |
| 37 | 3.1.1.8.1 | [SH02_08_01]信息操作 | milestone | 0h | 2014-07-28 | 2014-07-28 | 2d |  |  |  |
| 38 | 3.1.1.8.2 | [SH02_08_02]自动推送设置 | milestone | 0h | 2014-07-28 | 2014-07-28 | 2d |  |  |  |
| 39 | 3.1.1.8.3 | [SH02_08_03]分享 | milestone | 0h | 2014-07-28 | 2014-07-28 | 2d |  |  |  |
| 40 | 3.1.1.9 | **[SH02_09]常见问题解决** |  | 2d | 2014-07-30 | 2014-07-31 |  |  |  |  |
| 41 | 3.1.1.9.1 | [SH02_09_01]信息操作 | milestone | 0h | 2014-07-30 | 2014-07-30 | 2d |  |  |  |
| 42 | 3.1.1.10 | **[SH02_10]预约服务** |  | 3d | 2014-08-01 | 2014-08-05 |  |  |  |  |
| 43 | 3.1.1.10.1 | [SH02_10_01]预约 | milestone | 0h | 2014-08-01 | 2014-08-01 | 3d |  |  |  |
| 44 | 3.1.1.11 | **[SH02_11]信息推送（单推 广推）** |  | 3d | 2014-08-06 | 2014-08-08 |  |  |  |  |
| 45 | 3.1.1.11.1 | [SH02_11_01]推送 | milestone | 0h | 2014-08-06 | 2014-08-06 | 3d |  |  |  |
| 46 | 3.1.1.12 | **[SH02_12]讨论区** |  | 3d | 2014-08-11 | 2014-08-13 |  |  |  |  |
| 47 | 3.1.1.12.1 | [SH02_12_01]讨论 | milestone | 0h | 2014-08-11 | 2014-08-11 | 3d |  |  |  |
| 48 | 3.1.1.13 | **[SH02_13]留言板** |  | 2d | 2014-08-14 | 2014-08-15 |  |  |  |  |
| 49 | 3.1.1.13.1 | [SH02_13_01]留言板 | milestone | 0h | 2014-08-14 | 2014-08-14 | 2d |  |  |  |
| 50 | 3.1.1.14 | [SH02_14]协议管理 |  | 16h | 2014-08-18 | 2014-08-19 | 8d | finish no earlier than 2014-08-19 |  |  |
| 51 | 3.1.2 | 系统架构搭建 |  | 14.94d? | 2014-06-23 | 2014-07-11 | 35d | finish no earlier than 2014-07-11 | 王贺喜 | 119.5h |

Notes:
- 29: 功能名称：操作信息 / 功能描述：客户发送操作信息及记录查询 / 使用频率：中，设备发生报警时可对阀门进行操作，并将操作信息保存 / 使用人员：客户和汉威 / 限制条件：需要连接互联网和设备，用户登录 / 输入输出：输入：操作内容、用户id、设备id、时间、 / 输出：操作结果 / 提供者：闫威 / 优先级：高，操作命令的实现 / 获取时间：2014-06-09 / 其他：
- 30: 功能名称：操作信息 / 功能描述：客户委托汉威云对用户设备进行监控 / 使用频率：中，设备发生报警时可对阀门进行操作，并将操作信息保存 / 使用人员：客户 / 限制条件：需要连接互联网和设备，用户登录 / 输入输出：输入：操作内容、用户id、设备id、时间、监控方式（是否委托） / 输出：操作结果 / 提供者：闫威 / 优先级：高，操作命令的实现 / 获取时间：2014-06-09 / 其他：
- 32: 功能名称：报警信息 / 功能描述：可查看报警记录，分权限 / 使用频率：高，客户只能查询自己报警记录，汉威可查看所有 / 使用人员：客户/汉威 / 限制条件：需要连接互联网和设备，用户登录 / 输入输出：输入：用户id、设备id、时间段 / 输出：报警记录 / 提供者：闫威 / 优先级：高，操作命令的实现 / 获取时间：2014-06-09 / 其他：
- 34: 功能名称：报表 / 功能描述：可通过图表的形式对历史、现在、未来进行展示 / 使用频率：高 / 使用人员：客户/汉威 / 限制条件：需要连接互联网和设备，用户登录 / 输入输出：输入：用户id、设备id、时间段 / 输出：曲线图等 / 提供者：闫威 / 优先级：高 / 获取时间：2014-06-09 / 其他：
- 35: 功能名称：分析 / 功能描述：根据设备数据分析对客户进行提醒和推荐指导（开窗通风、就医检查） / 使用频率：高，客户只能查询自己报警记录，汉威可查看所有 / 使用人员：客户/汉威 / 限制条件：需要连接互联网和设备，用户登录 / 输入输出：输入：用户id、设备id、时间段 / 输出：健康指数 并 得出指导意见 / 提供者：闫威 / 优先级：高 / 获取时间：2014-06-09 / 其他：
- 37: 功能名称：信息操作 / 功能描述：对信息的基本操作、可推送 / 使用频率：高，信息的管理 / 使用人员：汉威/客户(客户只能查看，分权限) / 限制条件：需要连接互联网和设备，用户登录 / 输入输出：输入：信息 / 输出：操作结果 / 提供者：闫威 / 优先级：高 / 获取时间：2014-06-09 / 其他：
- 38: 功能名称：自动推送设置 / 功能描述：对实时数据分析后可智能发送相关知识提供帮助 / 使用频率：中 / 使用人员：汉威 / 限制条件：需要连接互联网和设备，用户登录 / 输入输出：输入：设置 / 输出：对数据分析筛选更适合的信息推送 / 提供者：闫威 / 优先级：低 / 获取时间：2014-06-09 / 其他：
- 39: 功能名称：分享 / 功能描述：分享到微博、公众号等 / 使用频率：中 / 使用人员：汉威/客户 / 限制条件：需要连接互联网，用户登录 / 输入输出：输入：内容 / 输出：分享 / 提供者：闫威 / 优先级：低 / 获取时间：2014-06-09 / 其他：
- 41: 功能名称：信息操作 / 功能描述：对信息的基本操作、可推送 / 使用频率：高，信息的管理 / 使用人员：汉威/客户(客户只能查看，分权限) / 限制条件：需要连接互联网和设备，用户登录 / 输入输出：输入：信息 / 输出：操作结果 / 提供者：闫威 / 优先级：高 / 获取时间：2014-06-09 / 其他：
- 43: 功能名称：预约 / 功能描述：分类预约（设备检查、专家指导） / 使用频率：高,帮助客户解决问题，提高服务质量 / 使用人员：汉威/客户 / 限制条件：需要连接互联网和APP，用户登录 / 输入输出：输入：发出预约id，接收预约的id，时间、内容 / 输出：是否同意预约时间，并进行预约前的提醒 / 提供者：闫威 / 优先级：高 / 获取时间：2014-06-09 / 其他：
- 45: 功能名称：推送服务 / 功能描述：移动端的推送 / 使用频率：高 / 使用人员：汉威 / 限制条件：需要连接互联网和APP，用户登录 / 输入输出：输入：信息、推送方式 / 输出：推送APP / 提供者：闫威 / 优先级：高 / 获取时间：2014-06-09 / 其他：
- 47: 功能名称：讨论 / 功能描述：参与不同的主题讨论,可查看或建主题（权限） / 使用频率：高 / 使用人员：汉威/客户 汉威有审核权限 / 限制条件：需要连接互联网，用户登录 / 输入输出：输入：讨论内容 / 输出：显示 / 提供者：闫威 / 优先级：中 / 获取时间：2014-06-09 / 其他：
- 49: 功能名称：留言板 / 功能描述：可将建议或想法发送给汉威云 / 使用频率：高 / 使用人员：汉威/客户 汉威可进行回复 / 限制条件：需要连接互联网，用户登录 / 输入输出：输入：留言内容 / 输出：显示并获得回复 / 提供者：闫威 / 优先级：中 / 获取时间：2014-06-09 / 其他：

| ID | WBS | Task | Type | Duration | Start | Finish | Total slack | Constraint | Resources | Work |
| --- | --- | --- | --- | --- | --- | --- | --- | --- | --- | --- |
| 52 | 3.2 | **智能家居移动端开发** |  | 22d | 2014-06-26 | 2014-07-25 |  |  |  | 312h |
| 53 | 3.2.1 | **[SH01]智能家居APP** |  | 22d | 2014-06-26 | 2014-07-25 |  |  |  | 264h |
| 54 | 3.2.1.1 | **[SH01_01]设备管理** |  | 6d | 2014-06-26 | 2014-07-03 |  |  |  | 39h |
| 55 | 3.2.1.1.1 | **[SH01_01_01]配置设备** |  | 4d | 2014-06-26 | 2014-07-01 |  |  |  | 27h |
| 56 | 3.2.1.1.1.1 | [SH01_01_01_02]发现设备 |  | 7.5h | 2014-06-26 | 2014-06-26 | 46d | finish no earlier than 2014-06-26 | 曾凡 | 7.5h |
| 57 | 3.2.1.1.1.2 | [SH01_01_01_03]查看已发现设备 |  | 7.5h | 2014-06-27 | 2014-06-27 | 45d | finish no earlier than 2014-06-27 | 曾凡 | 7.5h |
| 58 | 3.2.1.1.1.3 | [SH01_01_01_04]添加/删除设备 |  | 8h | 2014-06-30 | 2014-07-01 | 43.94d | start no earlier than 2014-06-30 | 曾凡 | 8h |
| 59 | 3.2.1.1.1.4 | [SH01_01_01_04]修改/查看设备 |  | 4h | 2014-07-01 | 2014-07-01 | 43.5d | start no earlier than 2014-07-01 | 曾凡 | 4h |
| 60 | 3.2.1.1.2 | **[SH01_01_02]控制设备** |  | 2d | 2014-07-01 | 2014-07-02 |  |  |  | 12h |
| 61 | 3.2.1.1.2.1 | [SH01_01_02_01]App控制设备开关 |  | 12h | 2014-07-01 | 2014-07-02 | 42.5d | start no earlier than 2014-07-01 | 曾凡 | 12h |
| 62 | 3.2.1.2 | **[SH01_02]数据管理** |  | 16d | 2014-06-26 | 2014-07-17 |  |  |  | 161h |
| 63 | 3.2.1.2.1 | **[SH01_02_01]查看历史信息** |  | 4d | 2014-06-26 | 2014-07-01 |  |  |  | 32h |
| 64 | 3.2.1.2.1.1 | [SH01_02_01_01]查看历史操作信息 |  | 16h | 2014-06-20 | 2014-06-23 | 49d | finish no earlier than 2014-06-23 | 闫威 | 16h |
| 65 | 3.2.1.2.1.2 | [SH01_02_01_02]查看历史报警信息 |  | 8h | 2014-06-24 | 2014-06-24 | 48d | finish no earlier than 2014-06-24 | 闫威 | 8h |
| 66 | 3.2.1.2.1.3 | [SH01_02_01_03]查看历史明细信息 |  | 8h | 2014-06-25 | 2014-06-25 | 47d | start no earlier than 2014-06-25 | 闫威 | 8h |
| 67 | 3.2.1.2.2 | **[SH01_02_02]更新显示传感器明细** |  | 12d | 2014-07-01 | 2014-07-16 |  |  |  | 97h |
| 68 | 3.2.1.2.2.1 | [SH01_02_02_01]手动更新 |  | 96h | 2014-07-01 | 2014-07-16 | 32d | start no earlier than 2014-07-01 | 闫威和曾凡 | 96h |
| 69 | 3.2.1.2.2.2 | [SH01_02_02_02]自动更新 |  | 1h | 2014-07-16 | 2014-07-16 | 32.88d | start no earlier than 2014-07-16 | 闫威 | 1h |
| 70 | 3.2.1.2.3 | [SH01_02_03]查看汉威知识 |  | 1d | 2014-07-03 | 2014-07-03 | 41d | finish no earlier than 2014-07-03 | 曾凡 | 8h |
| 71 | 3.2.1.2.4 | **[SH01_02_04]分享（微博、微信）** |  | 3d | 2014-06-30 | 2014-07-02 |  |  |  | 24h |
| 72 | 3.2.1.2.4.1 | [SH01_02_04_01] 分享选中的历史 |  | 8h | 2014-06-30 | 2014-06-30 | 2d |  | 曾凡 | 8h |
| 73 | 3.2.1.2.4.2 | [SH01_02_04_02] 分享选中的知识 |  | 8h | 2014-07-01 | 2014-07-01 | 43d | start no earlier than 2014-07-01 | 曾凡 | 8h |
| 74 | 3.2.1.2.4.3 | [SH01_02_04_03] 分享选中的传感器 |  | 8h | 2014-07-02 | 2014-07-02 | 42d | start no earlier than 2014-07-02 | 曾凡 | 8h |
| 75 | 3.2.1.3 | **[SH01_03]用户管理** |  | 3d | 2014-07-17 | 2014-07-21 |  |  |  | 24h |
| 76 | 3.2.1.3.1 | **[SH01_03_02]用户认证** |  | 4.06d | 2014-07-14 | 2014-07-17 |  |  |  | 24h |
| 77 | 3.2.1.3.1.1 | [SH01_03_02_01] 新建账号 |  | 8h | 2014-07-14 | 2014-07-14 | 34d | finish no earlier than 2014-07-14 | 曾凡 | 8h |
| 78 | 3.2.1.3.1.2 | [SH01_03_02_02] 忘记密码 |  | 8h | 2014-07-15 | 2014-07-15 | 33d | finish no earlier than 2014-07-15 | 曾凡 | 8h |
| 79 | 3.2.1.3.1.3 | [SH01_03_02_03] 修改密码 |  | 8h | 2014-07-16 | 2014-07-16 | 32d | start no earlier than 2014-07-16 | 曾凡 | 8h |
| 80 | 3.2.1.3.1.4 | [SH01_03_02_04] 账号登陆 | manual | 4h | 2014-07-17 | 2014-07-17 |  |  |  |  |

Notes:
- 56: 功能名称：发现设备 / 功能描述：自动发现局域网内的智能设备 / 使用频率：低，第一次登陆App、第一次连接终端设备或用户非常态调用 / 使用人员：App登录人 / 限制条件：需要连接局域网，用户登录 / 输入输出：输入：当前手机WIFI的SSID密码 / 输出：局域网内设备的连接信息 / 提供者：曾凡 / 优先级：高：（一个关键的需求）属于系统（产品）主要功能且当前版本中必须实现的。 / 获取时间：2014-05-30 / 其他：
- 57: 功能名称：查看已发现设备 / 功能描述：发现设备后可以查看已发现的设备，以列表或者分散的图片显示 / 使用频率：低，第一次登陆App、第一次连接终端设备或用户非常态调用 / 使用人员：App登录人 / 限制条件：需要连接局域网，用户登录 / 输入输出：输入：局域网内设备的连接信息 / 输出：设备列表 / 提供者：曾凡 / 优先级：高：（一个关键的需求）属于系统（产品）主要功能且当前版本中必须实现的。 / 获取时间：2014-05-30 / 其他：
- 58: 功能名称：查看已发现设备 / 功能描述：用户添加已发现的设备，同时也可以删除已添加的设备，需要联网激活设备和接受服务端应答确认信息 / 使用频率：低，第一次登陆App、第一次连接终端设备或用户非常态调用 / 使用人员：App登录人 / 限制条件：需要连接互联网，用户登录 / 输入输出：输入：设备列表 / 输出：服务器返回成功/失败应答和最新设备列表 / 提供者：曾凡 / 优先级：高：（一个关键的需求）属于系统（产品）主要功能且当前版本中必须实现的。 / 获取时间：2014-05-30 / 其他：
- 59: 功能名称：修改/查看设备信息 / 功能描述：修改或查看已添加的设备信息，例如：用户设置的设备别名（取而代之默认的设备型号）、设备的使用场景，激活时间等 / 使用频率：低，第一次登陆App、第一次连接终端设备或用户非常态调用 / 使用人员：App登录人 / 限制条件：需要连接互联网，用户登录 / 输入输出：输入：设备列表 / 输出：服务器返回成功/失败应答和最新设备列表 / 提供者：曾凡 / 优先级：高：（一个关键的需求）属于系统（产品）主要功能且当前版本中必须实现的。 / 获取时间：2014-05-30 / 其他：
- 61: 功能名称：控制设备开关 / 功能描述：可以通过服务器远程控制设备的开关，服务器端自动记录操作 / 使用频率：中，用户非常态调用或 / 使用人员：App登录人 / 限制条件：需要连接互联网，用户登录 / 输入输出：输入：当前设备唯一标识 / 输出：服务器返回成功/失败应答 / 提供者：曾凡 / 优先级：高：（一个关键的需求）属于系统（产品）主要功能且当前版本中必须实现的 / 获取时间：2014-05-30 / 其他：
- 64: 功能名称：查看历史操作信息 / 功能描述：用户可以查看历史设备开关操作信息 / 使用频率：中，用户非常态调用 / 使用人员：App登录人 / 限制条件：需要连接互联网，用户登录 / 输入输出：输入：当前设备唯一标识 / 输出：服务器返回成功/失败应答，历史操作列表 / 提供者：曾凡 / 优先级：高：（一个关键的需求）属于系统（产品）主要功能且当前版本中必须实现的 / 获取时间：2014-05-30 / 其他：
- 65: 功能名称：控制设备开关 / 功能描述：用户可以查看设备的历史报警信息 / 使用频率：高，主页显示 / 使用人员：App登录人 / 限制条件：需要连接互联网，用户登录 / 输入输出：输入：当前设备唯一标识 / 输出：服务器返回成功/失败应答，历史报警列表 / 提供者：曾凡 / 优先级：高：（一个关键的需求）属于系统（产品）主要功能且当前版本中必须实现的 / 获取时间：2014-05-30 / 其他：
- 66: 功能名称：查看历史明细信息 / 功能描述：用户可以查看设备的历史明细信息 / 使用频率：高，主页显示 / 使用人员：App登录人 / 限制条件：需要连接互联网，用户登录 / 输入输出：输入：当前设备唯一标识 / 输出：服务器返回成功/失败应答，历史明细列表 / 提供者：曾凡 / 优先级：高：（一个关键的需求）属于系统（产品）主要功能且当前版本中必须实现的 / 获取时间：2014-05-30 / 其他：
- 68: 功能名称：手动更新 / 功能描述：手动更新当前传感器的信息 / 使用频率：高，首页用户点击 / 使用人员：App登录人 / 限制条件：需要连接互联网，用户登录 / 输入输出：输入：用户点击 / 输出：服务器返回成功/失败应答，最新终端设备明细信息 / 提供者：曾凡 / 优先级：高：（一个关键的需求）属于系统（产品）主要功能且当前版本中必须实现的 / 获取时间：2014-05-30 / 其他：
- 69: 功能名称：自动更新 / 功能描述：登录后自动更新最新的传感器信息 / 使用频率：高，登录自动执行 / 使用人员：App登录人 / 限制条件：需要连接互联网，用户登录 / 输入输出：输入：当前设备唯一标识 / 输出：服务器返回成功/失败应答，最新终端设备明细信息 / 提供者：曾凡 / 优先级：高：（一个关键的需求）属于系统（产品）主要功能且当前版本中必须实现的 / 获取时间：2014-05-30 / 其他：
- 72: 功能名称：分享选中的历史 / 功能描述：分享选中的历史页面的图片信息 / 使用频率：低，基本没人会去分享 / 使用人员：App登录人 / 限制条件：需要连接互联网，用户登录 / 输入输出：输入：分享请求 / 输出：请求App的应答 / 提供者：曾凡 / 优先级：低：（功能或质量上的增强）如果资源允许的话，实现这些需求会使系统（产品）更完美。 / 获取时间：2014-05-30 / 其他：
- 73: 功能名称：分享选中的知识 / 功能描述：分享选中知识的文字和图片信息 / 使用频率：低，基本没人会去分享 / 使用人员：App登录人 / 限制条件：需要连接互联网，用户登录 / 输入输出：输入：分享请求 / 输出：请求App的应答 / 提供者：曾凡 / 优先级：低：（功能或质量上的增强）如果资源允许的话，实现这些需求会使系统（产品）更完美。 / 获取时间：2014-05-30 / 其他：
- 74: 功能名称：分享选中的传感器 / 功能描述：分享本地的传感器信息 / 使用频率：低，基本没人会去分享 / 使用人员：App登录人 / 限制条件：需要连接互联网，用户登录 / 输入输出：输入：分享请求 / 输出：请求App的应答 / 提供者：曾凡 / 优先级：低：（功能或质量上的增强）如果资源允许的话，实现这些需求会使系统（产品）更完美。 / 获取时间：2014-05-30 / 其他：
- 77: 功能名称：新建账号 / 功能描述：连接服务端创建账号，建议用户名用邮箱 / 使用频率：低，第一次登录时创建 / 使用人员：App登录人 / 限制条件：需要连接互联网，用户登录 / 输入输出：输入：用户信息 / 输出：服务器返回成功/失败应答 / 提供者：曾凡 / 优先级：高：（一个关键的需求）属于系统（产品）主要功能且当前版本中必须实现的 / 获取时间：2014-05-30 / 其他：
- 78: 功能名称：忘记密码 / 功能描述：忘记密码需要登录服务端通过发送邮箱或者短信验证后重置 / 使用频率：中，长时间不登出App遗忘密码 / 使用人员：App登录人 / 限制条件：需要连接互联网，用户登录 / 输入输出：输入：用户名 / 输出：邮件或密码验证码或地址 / 提供者：曾凡 / 优先级：高：（一个关键的需求）属于系统（产品）主要功能且当前版本中必须实现的 / 获取时间：2014-05-30 / 其他：
- 79: 功能名称：修改密码 / 功能描述：在本地修改密码，修改密码后设置App的登录上下文 / 使用频率：低，有安全意识的人不多 / 使用人员：App登录人 / 限制条件：需要连接互联网，用户登录 / 输入输出：输入：老密码，新密码 / 输出：服务器返回成功/失败应答 / 提供者：曾凡 / 优先级：高：（一个关键的需求）属于系统（产品）主要功能且当前版本中必须实现的 / 获取时间：2014-05-30 / 其他：

| ID | WBS | Task | Type | Duration | Start | Finish | Predecessors | Total slack | Constraint | Resources | Work |
| --- | --- | --- | --- | --- | --- | --- | --- | --- | --- | --- | --- |
| 81 | 3.2.1.4 | **[SH01_05]软件功能** |  | 5d | 2014-07-21 | 2014-07-25 |  |  |  |  | 40h |
| 82 | 3.2.1.4.1 | **[SH01_05_01]个性化** |  | 2d | 2014-07-21 | 2014-07-22 |  |  |  |  | 16h |
| 83 | 3.2.1.4.1.1 | [SH01_05_01_01] 主题 |  | 8h | 2014-07-21 | 2014-07-21 |  | 0d |  | 曾凡 | 8h |
| 84 | 3.2.1.4.1.2 | [SH01_05_01_02] 留言板 |  | 8h | 2014-07-22 | 2014-07-22 | 83 | 0d |  | 曾凡 | 8h |
| 85 | 3.2.1.4.2 | **[SH01_05_02]通用功能** |  | 3d | 2014-07-23 | 2014-07-25 |  |  |  |  | 24h |
| 86 | 3.2.1.4.2.1 | [SH01_05_02_01] 关于 |  | 4h | 2014-07-23 | 2014-07-23 |  | 27.5d | start no earlier than 2014-07-23 | 闫威 | 4h |
| 87 | 3.2.1.4.2.2 | [SH01_05_02_02] 帮助 |  | 4h | 2014-07-23 | 2014-07-23 |  | 27.5d | start no earlier than 2014-07-23 | 闫威 | 4h |
| 88 | 3.2.1.4.2.3 | [SH01_05_02_03] 开发者名单 |  | 8h | 2014-07-24 | 2014-07-24 |  | 0d | start no earlier than 2014-07-24 | 曾凡 | 8h |
| 89 | 3.2.1.4.2.4 | [SH01_05_02_04] 退出 |  | 8h | 2014-07-25 | 2014-07-25 | 88 | 0d |  | 曾凡 | 8h |
| 90 | 3.2.2 | 智能家居移动端架构搭建 |  | 3d | 2014-06-26 | 2014-07-01 |  | 18.94d |  | 曾凡; 闫威 | 48h |
| 91 | 4 | **测试** |  | 45d | 2014-06-25 | 2014-08-26 |  |  |  |  | 864h |
| 92 | 4.1 | 制定测试计划 | manual | 1d | 2014-06-25 | 2014-06-26 |  |  |  |  |  |
| 93 | 4.2 | 测试用例设计 | manual | 6d | 2014-06-27 | 2014-07-04 |  |  |  |  |  |
| 94 | 4.3 | 测试用例评审、完善 | manual | 2d | 2014-07-04 | 2014-07-07 |  |  |  |  |  |
| 95 | 4.4 | 第一轮测试 | manual | 4d | 2014-07-09 | 2014-07-14 |  |  |  | 苌帅; 李留品 | 64h |
| 96 | 4.5 | bug修改 | manual | 6d | 2014-07-15 | 2014-07-22 |  |  |  | 曾凡; 郭伟明; 王贺喜; 闫威 | 192h |
| 97 | 4.6 | 第二轮测试 | manual | 9d | 2014-07-22 | 2014-08-01 |  |  |  | 苌帅; 李留品 | 144h |
| 98 | 4.7 | bug修改 | manual | 6d | 2014-08-02 | 2014-08-08 |  |  |  | 曾凡; 郭伟明; 王贺喜; 闫威; 苌帅 | 240h |
| 99 | 4.8 | 测试报告&用户手册 | manual | 3d | 2014-08-21 | 2014-08-26 |  |  |  | 曾凡; 李留品; 王贺喜; 闫威 | 96h |
| 100 | 4.9 | 公测 | manual | 8d | 2014-08-08 | 2014-08-20 |  |  |  | 苌帅; 李留品 | 128h |
| 101 | 5 | 验收 | manual | 1d | 2014-08-26 | 2014-08-27 |  |  |  | 曾凡; 苌帅 | 16h |
| 108 | 6 | 发布维护 |  | 7.94d | 2014-08-19 | 2014-08-28 |  | 1d | finish no earlier than 2014-08-28 | 曾凡; 苌帅 | 127h |
| 103 | 7 | 结项验收 | manual | 1d | 2014-08-29 | 2014-08-29 |  |  |  | 曾凡; 苌帅 | 16h |
| 104 | 8 | 后续维护升级 | manual | 1d? | 2014-06-03 | 2014-06-03 |  |  |  |  |  |

Notes:
- 83: 功能名称：主题 / 功能描述：更换软件的主题选择，可以从服务端下载主题 / 使用频率：低，用户换一次就完了 / 使用人员：App登录人 / 限制条件：需要连接互联网，用户登录 / 输入输出：输入：选择的主题编号 / 输出：服务器返回成功/失败应答 / 提供者：曾凡 / 优先级：中：（支持必要的功能）最终所需要的，但如果有必要的话，可以延迟到下一个版本。 / 获取时间：2014-05-30 / 其他：
- 84: 功能名称：留言板 / 功能描述：显示服务端提供的web留言反馈页面，可以根据当前登录用户去自动验证登录服务器 / 使用频率：低，基本上没人用 / 使用人员：App登录人 / 限制条件：需要连接互联网，用户登录 / 输入输出：输入：用户留言 / 输出：服务端页面更新 / 提供者：曾凡 / 优先级：低：（功能或质量上的增强）如果资源允许的话，实现这些需求会使系统（产品）更完美 / 获取时间：2014-05-30 / 其他：
- 86: 功能名称：关于 / 功能描述：显示软件全名、公司、版本号等信息 / 使用频率：中，查看的人不多 / 使用人员：App登录人 / 限制条件：用户登录 / 输入输出：输入：用户点击 / 输出：关于信息 / 提供者：曾凡 / 优先级：中：（支持必要的功能）最终所需要的，但如果有必要的话，可以延迟到下一个版本。 / 获取时间：2014-05-30 / 其他：
- 87: 功能名称：帮助 / 功能描述：显示帮助信息 / 使用频率：中，对仪表不熟悉的人可以选 / 使用人员：App登录人 / 限制条件：/ 输入输出：输入：用户点击 / 输出：帮助列表/图片 / 提供者：曾凡 / 优先级：中：（支持必要的功能）最终所需要的，但如果有必要的话，可以延迟到下一个版本。 / 获取时间：2014-05-30 / 其他：
- 88: 功能名称：开发者名单 / 功能描述：显示开发者名单 / 使用频率：低，用户换一次就完了 / 使用人员：App登录人 / 限制条件：/ 输入输出：输入：用户点击 / 输出：开发者名单列表/图片 / 提供者：曾凡 / 优先级：中：（支持必要的功能）最终所需要的，但如果有必要的话，可以延迟到下一个版本。 / 获取时间：2014-05-30 / 其他：
- 89: 功能名称：退出 / 功能描述：退出当前的登录账户并返回登录页面 / 使用频率：低，基本没人去退出 / 使用人员：App登录人 / 限制条件：用户登录 / 输入输出：输入：用户点击 / 输出：跳转主页面，退出登录 / 提供者：曾凡 / 优先级：高：（一个关键的需求）属于系统（产品）主要功能且当前版本中必须实现的。 / 获取时间：2014-05-30 / 其他：
