Schedule from MS Project, 2014-05-20 to 2014-08-29, A marks actual dates.

## Calendars

- 标准: Mon-Fri 08:00-12:00, 13:00-17:00; Sat-Sun off.

## Resources

| Resource |
| --- |
| 闫威 |
| 杜群星 |
| 曾凡 |
| 王贺喜 |
| 郭伟明 |
| 苌帅 |
| 闫威和曾凡 |
| 李品留 |
| 李留品 |
| 李静 |
| 李羽浩 |
| 汉威云 |
| 开发三部 |
| wifi模块厂商 |
| 留品 |
| 赵帅 |
| 全体人员 |

## Schedule

| ID | WBS | Task | Type | Duration | Start | Finish | Complete | Remaining | Actual start | Actual finish | Baseline 1 start | Baseline 1 finish | Total slack | Constraint | Resources | Work | Actual work |
| --- | --- | --- | --- | --- | --- | --- | --- | --- | --- | --- | --- | --- | --- | --- | --- | --- | --- |
| 1 | 1 | **需求设计** |  | 19.06d | 2014-05-20 | 2014-06-13 A | 100% |  | 2014-06-02 |  | 2014-05-20 | 2014-06-13 |  |  |  | 223.52h | 223.52h |
| 2 | 1.1 | 需求调研 |  | 9d | 2014-06-03 A | 2014-06-13 A | 100% |  |  |  | 2014-06-03 | 2014-06-13 |  |  | 闫威; 曾凡 | 144h | 144h |
| 3 | 1.2 | 编写用户需求规格说明书 | milestone | 6.94d | 2014-06-02 A | 2014-06-11 A | 100% |  |  |  | 2014-06-02 | 2014-06-11 |  | finish no earlier than 2014-06-10 | 曾凡 | 55.52h | 55.52h |
| 4 | 1.3 | 需求原型 | milestone, manual | 2d | 2014-06-11 A | 2014-06-13 A | 100% |  |  |  | 2014-06-11 | 2014-06-13 |  |  | 曾凡 | 16h | 16h |
| 5 | 1.4 | 接口设计 | milestone, manual | 1d | 2014-06-12 A | 2014-06-13 A | 100% |  |  |  | 2014-06-12 | 2014-06-13 |  |  | 曾凡 | 8h | 8h |
| 6 | 5 | **系统设计** |  | 7d | 2014-06-17 A | 2014-06-25 A | 100% |  |  |  | 2014-06-17 | 2014-06-25 |  |  |  | 117.6h | 117.6h |
| 7 | 2.1 | 概要设计说明书 | milestone | 1d | 2014-06-17 A | 2014-06-17 A | 100% |  |  |  | 2014-06-17 | 2014-06-17 |  | finish no earlier than 2014-06-17 | 曾凡 | 8h | 8h |
| 8 | 2.2 | 用户界面原型设计 | milestone | 0.94d | 2014-06-18 A | 2014-06-19 A | 100% |  |  |  | 2014-06-18 | 2014-06-19 |  | finish no earlier than 2014-06-18 | 王贺喜; 曾凡 | 15.04h | 15.04h |
| 9 | 2.3 | 数据库设计 | milestone | 2.94d | 2014-06-19 A | 2014-06-24 A | 100% |  |  |  | 2014-06-19 | 2014-06-24 |  | finish no earlier than 2014-06-23 | 曾凡; 王贺喜; 闫威 | 70.56h | 70.56h |
| 10 | 2.4 | 详细设计 | milestone | 1d | 2014-06-24 A | 2014-06-25 A | 100% |  |  |  | 2014-06-24 | 2014-06-25 |  | start no earlier than 2014-06-24 | 王贺喜; 闫威; 曾凡 | 24h | 24h |
| 11 | 3 | **开发计划** |  | 19d | 2014-07-22 | 2014-08-15 | 48% | 9.85d | 2014-06-23 |  | 2014-07-22 | 2014-08-15 |  |  |  | 5673h | 2300.72h |
| 12 | 3.1 | **临时任务（每周动态）** |  | 2d | 2014-07-22 | 2014-07-23 |  |  |  |  | 2014-07-22 | 2014-07-23 |  |  |  | 46.5h |  |
| 13 | 3.1.1 | APP端主题选型 |  | 15.5h | 2014-07-22 | 2014-07-23 |  |  |  |  | 2014-07-22 | 2014-07-23 | 27d | finish no earlier than 2014-07-23 | 曾凡; 李静 | 31h |  |
| 14 | 3.1.2 | 短信服务程序搭建 |  | 15.5h | 2014-07-22 | 2014-07-23 |  |  |  |  | 2014-07-22 | 2014-07-23 | 27d | finish no earlier than 2014-07-23 | 王贺喜 | 15.5h |  |
| 15 | 3.1.3 | 整理业务服务端到数据采集云的WS接口说明 | manual | 1d? | 2014-07-22 | 2014-07-23 |  |  |  |  | 2014-07-30 | 2014-07-30 |  |  |  |  |  |
| 16 | 3.2 | **[SH02]智能家居服务端** |  | 5d | 2014-07-22 | 2014-07-29 | 89% | 0.56d | 2014-07-18 |  | 2014-07-22 | 2014-07-29 |  |  |  | 507h | 443h |
| 17 | 3.2.1 | **[SH02_03]设备管理** |  | 1d | 2014-07-22 | 2014-07-23 | 100% |  | 2014-07-21 | 2014-07-29 | 2014-07-22 | 2014-07-23 |  |  |  | 95h | 95h |
| 18 | 3.2.1.1 | [SH02_03_02]设备管理 |  | 47.5h | 2014-07-21 A | 2014-07-29 A | 100% |  |  |  | 2014-07-21 | 2014-07-23 |  |  | 王贺喜; 李留品 | 95h | 95h |
| 19 | 3.2.2 | **[SH02_15]实时数据** |  | 1d | 2014-07-21 A | 2014-07-22 | 100% |  |  | 2014-07-29 | 2014-07-21 | 2014-07-22 |  |  |  | 111h | 111h |
| 20 | 3.2.2.1 | [SH02_15_01]实时传感器数据查询 |  | 55.5h | 2014-07-21 A | 2014-07-29 A | 100% |  |  |  | 2014-07-21 | 2014-07-22 |  |  | 王贺喜; 李留品 | 111h | 111h |
| 21 | 3.2.3 | **[SH02_06]报警信息** |  | 1d | 2014-07-22 | 2014-07-23 |  | 1d | 2014-07-21 |  | 2014-07-22 | 2014-07-23 |  |  |  | 16h |  |
| 22 | 3.2.3.1 | [SH02_06_01]报警信息管理 |  | 8h | 2014-07-21 A | 2014-07-23 |  | 8h |  |  | 2014-07-22 | 2014-07-23 | 0d |  | 王贺喜; 李留品 | 16h |  |
| 23 | 3.2.4 | **[SH02_07]历史数据分析** |  | 3d | 2014-07-23 | 2014-07-25 | 93% | 0.2d | 2014-07-21 |  | 2014-07-23 | 2014-07-25 |  |  |  | 119h | 111h |
| 24 | 3.2.4.1 | [SH02_07_02]过去7天历史数据分析 |  | 55.5h | 2014-07-21 A | 2014-07-29 A | 100% |  |  |  | 2014-07-23 | 2014-07-23 |  | finish no earlier than 2014-07-23 | 王贺喜; 李留品 | 111h | 111h |
| 25 | 3.2.4.2 | [SH02_07_03]历史报警数据分析 |  | 4h | 2014-07-21 A | 2014-07-23 |  | 4h |  |  | 2014-07-23 | 2014-07-23 | 2.44d |  | 王贺喜; 李留品 | 8h |  |

Notes:
- 6: 曽凡负责移动端的概要设计 / 杜群星负责整体概要设计包括整合服务端和移动端的概要设计
- 17: 功能名称：基本信息 / 功能描述：管理该设备注册等功能 / 使用频率：高 / 使用人员：高，客户只能查询自己记录，汉威可查看所有 / 限制条件：需要连接互联网，用户登录 / 输入输出：输入：设备id / 输出：详细信息 / 提供者：闫威 / 优先级：高 / 获取时间：2014-06-09 / 其他：
- 18: 功能名称：管理该设备注册等功能 / 功能描述：可查看实时传感器记录，分权限 / 使用频率：高，客户只能查询自己记录，汉威可查看所有 / 使用人员：客户/汉威 / 限制条件：需要连接互联网和设备，用户登录 / 输入输出：输入：用户id、设备id、时间段 / 输出：报警记录 / 提供者：曾凡 / 优先级：高，操作命令的实现 / 获取时间：2014-06-09 / 其他：
- 20: 功能名称：实时传感器数据查询 / 功能描述：可查看实时传感器记录，分权限 / 使用频率：高，客户只能查询自己记录，汉威可查看所有 / 使用人员：客户/汉威 / 限制条件：需要连接互联网和设备，用户登录 / 输入输出：输入：用户id、设备id、时间段 / 输出：报警记录 / 提供者：曾凡 / 优先级：高，操作命令的实现 / 获取时间：2014-06-09 / 其他：
- 22: 功能名称：报警信息管理 / 功能描述：可查看报警记录，分权限 / 使用频率：高，客户只能查询自己报警记录，汉威可查看所有 / 使用人员：客户/汉威 / 限制条件：需要连接互联网和设备，用户登录 / 输入输出：输入：用户id、设备id、时间段 / 输出：报警记录 / 提供者：闫威 / 优先级：高，操作命令的实现 / 获取时间：2014-06-09 / 其他：
- 24: 功能名称：过去7天历史数据分析 / 功能描述：获取七天传感器参数的最高值 / 使用频率：高，客户只能查询自己的记录 / 使用人员：客户 / 限制条件：需要连接互联网和设备，用户登录 / 输入输出：输入：用户id、设备id、时间段 / 输出：报表 / 提供者：曾凡 / 优先级：高 / 获取时间：2014-06-09 / 其他：
- 25: 功能名称：历史报警数据分析 / 功能描述：历史报警信息 / 使用频率：高，客户只能查询自己报警记录 / 使用人员：客户 / 限制条件：需要连接互联网和设备，用户登录 / 输入输出：输入：用户id、设备id、时间段 / 输出：报表 / 提供者：曾凡 / 优先级：高 / 获取时间：2014-06-09 / 其他：

| ID | WBS | Task | Type | Duration | Start | Finish | Complete | Remaining | Actual start | Actual finish | Baseline 1 start | Baseline 1 finish | Total slack | Constraint | Resources | Work | Actual work |
| --- | --- | --- | --- | --- | --- | --- | --- | --- | --- | --- | --- | --- | --- | --- | --- | --- | --- |
| 26 | 3.2.5 | **[SH02_11]信息推送** |  | 1d | 2014-07-21 A | 2014-07-22 |  | 1d |  |  | 2014-07-21 | 2014-07-22 |  |  |  | 24h |  |
| 27 | 3.2.5.1 | [SH02_11_01]推送 |  | 8h | 2014-07-21 A | 2014-07-22 |  | 8h |  |  | 2014-07-21 | 2014-07-22 | 28.94d | start no earlier than 2014-07-21 | 王贺喜; 李留品; 李羽浩 | 24h |  |
| 28 | 3.2.6 | **[SH02_12]讨论区** |  | 2d | 2014-07-22 | 2014-07-23 A | 100% |  | 2014-07-18 |  | 2014-07-22 | 2014-07-23 |  |  |  | 63h | 63h |
| 29 | 3.2.6.1 | [SH02_12_01]讨论 |  | 31.5h | 2014-07-18 A | 2014-07-23 A | 100% |  |  |  | 2014-07-18 | 2014-07-23 |  | finish no earlier than 2014-07-23 | 李羽浩; 李留品 | 63h | 63h |
| 30 | 3.2.7 | **[SH02_13]用户反馈** |  | 1d | 2014-07-23 | 2014-07-24 | 100% |  | 2014-07-18 | 2014-07-23 | 2014-07-23 | 2014-07-24 |  |  |  | 63h | 63h |
| 31 | 3.2.7.1 | [SH02_13_01]用户反馈 |  | 3.94d | 2014-07-18 A | 2014-07-23 A | 100% |  |  |  | 2014-07-23 | 2014-07-24 |  | start no earlier than 2014-07-23 | 李羽浩; 李留品 | 63h | 63h |
| 32 | 3.2.8 | **[SH02_12]帮助中心** |  | 1d | 2014-07-24 A | 2014-07-25 |  | 1d |  |  | 2014-07-24 | 2014-07-25 |  |  |  | 16h |  |
| 33 | 3.2.8.1 | [SH02_12_01]帮助中心 |  | 1d | 2014-07-24 A | 2014-07-25 |  | 1d |  |  | 2014-07-24 | 2014-07-25 | 25.94d | start no earlier than 2014-07-24 | 李羽浩; 李留品 | 16h |  |
| 34 | 3.3 | **UE设计** |  | 40d | 2014-06-23 | 2014-08-15 |  |  |  |  | 2014-06-23 | 2014-08-15 |  |  |  | 1920h |  |
| 35 | 3.3.1 | 服务端UE整体设计 |  | 30d | 2014-06-23 | 2014-08-04 |  |  |  |  | 2014-06-23 | 2014-08-04 | 19.94d | start no earlier than 2014-06-23 | 曾凡; 赵帅 | 480h |  |
| 36 | 3.3.2 | APP端UE整体设计 |  | 30d | 2014-06-23 | 2014-08-04 |  |  |  |  | 2014-06-23 | 2014-08-04 | 19.94d | start no earlier than 2014-06-23 | 曾凡; 赵帅 | 480h |  |
| 37 | 3.3.3 | 风格设计 |  | 30d | 2014-06-23 | 2014-08-04 |  |  |  |  | 2014-06-23 | 2014-08-04 | 19.94d | start no earlier than 2014-06-23 | 曾凡; 赵帅 | 480h |  |
| 38 | 3.3.4 | UI设计 |  | 30d | 2014-06-23 | 2014-08-04 |  |  |  |  | 2014-06-23 | 2014-08-04 | 19.94d | start no earlier than 2014-06-23 | 曾凡; 赵帅 | 480h |  |
| 39 | 3.4 | **[SH01]智能家居移动端开发（第一阶段）** |  | 20.06d | 2014-06-26 A | 2014-07-23 | 99% | 0d |  |  | 2014-06-26 | 2014-07-23 |  |  | 曾凡; 汉威云; 李静; 李羽浩; 王贺喜; 闫威; wifi模块厂商; 开发三部 | 2161h | 917.22h |
| 40 | 3.4.1 | **[SH01_01]设备管理** |  | 12.06d | 2014-06-26 A | 2014-07-11 A | 100% |  |  |  | 2014-06-26 | 2014-07-11 |  |  |  | 445h | 445h |
| 41 | 3.4.1.1 | **[SH01_01_01]配置设备** |  | 12.06d | 2014-06-26 A | 2014-07-11 A | 100% |  |  |  | 2014-06-26 | 2014-07-11 |  |  |  | 445h | 445h |
| 42 | 3.4.1.1.1 | [SH01_01_01_02]发现设备 |  | 11.94d | 2014-06-26 A | 2014-07-11 A | 100% |  |  |  | 2014-06-26 | 2014-07-11 |  | finish no earlier than 2014-07-07 | 曾凡; 王贺喜; 开发三部; wifi模块厂商 | 367h | 367h |
| 43 | 3.4.1.1.2 | [SH01_01_01_03]查看已发现设备 |  | 3.94d | 2014-07-08 A | 2014-07-11 A | 100% |  |  |  | 2014-07-08 | 2014-07-11 |  | finish no earlier than 2014-07-10 | 曾凡; 王贺喜 | 63h | 63h |
| 44 | 3.4.1.1.3 | [SH01_01_01_04]删除设备 |  | 0.94d | 2014-07-11 A | 2014-07-11 A | 100% |  |  |  | 2014-07-11 | 2014-07-11 |  | finish no earlier than 2014-07-11 | 曾凡; 王贺喜 | 15h | 15h |
| 45 | 3.4.2 | **[SH01_02]数据管理** |  | 8d | 2014-07-11 A | 2014-07-22 A | 100% |  |  |  | 2014-07-11 | 2014-07-22 |  |  |  | 261h | 261h |
| 46 | 3.4.2.1 | **[SH01_02_01]查看历史信息** |  | 8d | 2014-07-11 A | 2014-07-22 A | 100% |  |  |  | 2014-07-11 | 2014-07-22 |  |  |  | 190.5h | 190.5h |
| 47 | 3.4.2.1.1 | [SH01_02_01_03]查看历史明细信息 |  | 7.94d | 2014-07-11 A | 2014-07-22 A | 100% |  |  |  | 2014-07-11 | 2014-07-22 |  | finish no earlier than 2014-07-22 | 曾凡; 王贺喜; 汉威云 | 190.5h | 190.5h |
| 48 | 3.4.2.2 | **[SH01_02_02]更新显示传感器明细** |  | 3d | 2014-07-18 A | 2014-07-22 A | 100% |  |  |  | 2014-07-18 | 2014-07-22 |  |  |  | 70.5h | 70.5h |
| 49 | 3.4.2.2.1 | [SH01_02_02_01]手动更新 |  | 2.94d | 2014-07-18 A | 2014-07-22 A | 100% |  |  |  | 2014-07-18 | 2014-07-22 |  | finish no earlier than 2014-07-15 | 曾凡; 王贺喜; 汉威云 | 70.5h | 70.5h |
| 50 | 3.4.2.2.2 | [SH01_02_02_02]自动更新 | milestone | 0d | 2014-07-18 A | 2014-07-18 A | 100% |  |  |  | 2014-07-18 | 2014-07-18 |  | finish no earlier than 2014-07-23 | 曾凡; 王贺喜; 汉威云 |  |  |

Notes:
- 27: 功能名称：推送 / 功能描述：管理员向用户推送信息 / 使用频率：高 / 使用人员：汉威 / 限制条件：管理员登陆 / 输入输出：输入：讨论内容 / 输出：显示 / 提供者：闫威 / 优先级：中 / 获取时间：2014-06-09 / 其他：
- 29: 功能名称：讨论 / 功能描述：参与不同的主题讨论,可查看或建主题（权限） / 使用频率：高 / 使用人员：汉威/客户 汉威有审核权限 / 限制条件：需要连接互联网，用户登录 / 输入输出：输入：讨论内容 / 输出：显示 / 提供者：闫威 / 优先级：中 / 获取时间：2014-06-09 / 其他：
- 31: 功能名称：用户反馈 / 功能描述：可将建议或想法发送给汉威 / 使用频率：高 / 使用人员：汉威/客户 汉威可进行回复 / 限制条件：需要连接互联网，用户登录 / 输入输出：输入：留言内容 / 输出：显示并获得回复 / 提供者：闫威 / 优先级：中 / 获取时间：2014-06-09 / 其他：
- 33: 功能名称：讨论区 / 功能描述：参与不同的主题讨论,可查看或建主题（权限） / 使用频率：高 / 使用人员：汉威/客户 汉威有审核权限 / 限制条件：需要连接互联网，用户登录 / 输入输出：输入：讨论内容 / 输出：显示 / 提供者：闫威 / 优先级：中 / 获取时间：2014-06-09 / 其他：
- 42: 功能名称：发现设备 / 功能描述：自动发现局域网内的智能设备 / 使用频率：低，第一次登陆App、第一次连接终端设备或用户非常态调用 / 使用人员：App登录人 / 限制条件：需要连接局域网，用户登录 / 输入输出：输入：当前手机WIFI的SSID密码 / 输出：局域网内设备的连接信息 / 提供者：曾凡 / 优先级：高：（一个关键的需求）属于系统（产品）主要功能且当前版本中必须实现的。 / 获取时间：2014-05-30 / 其他：
- 43: 功能名称：查看已发现设备 / 功能描述：发现设备后可以查看已发现的设备，以列表或者分散的图片显示 / 使用频率：低，第一次登陆App、第一次连接终端设备或用户非常态调用 / 使用人员：App登录人 / 限制条件：需要连接局域网，用户登录 / 输入输出：输入：局域网内设备的连接信息 / 输出：设备列表 / 提供者：曾凡 / 优先级：高：（一个关键的需求）属于系统（产品）主要功能且当前版本中必须实现的。 / 获取时间：2014-05-30 / 其他：
- 44: 功能名称：查看已发现设备 / 功能描述：用户添加已发现的设备，同时也可以删除已添加的设备，需要联网激活设备和接受服务端应答确认信息 / 使用频率：低，第一次登陆App、第一次连接终端设备或用户非常态调用 / 使用人员：App登录人 / 限制条件：需要连接互联网，用户登录 / 输入输出：输入：设备列表 / 输出：服务器返回成功/失败应答和最新设备列表 / 提供者：曾凡 / 优先级：高：（一个关键的需求）属于系统（产品）主要功能且当前版本中必须实现的。 / 获取时间：2014-05-30 / 其他：
- 47: 功能名称：查看历史明细信息 / 功能描述：用户可以查看设备的历史明细信息 / 使用频率：高，主页显示 / 使用人员：App登录人 / 限制条件：需要连接互联网，用户登录 / 输入输出：输入：当前设备唯一标识 / 输出：服务器返回成功/失败应答，历史明细列表 / 提供者：曾凡 / 优先级：高：（一个关键的需求）属于系统（产品）主要功能且当前版本中必须实现的 / 获取时间：2014-05-30 / 其他：
- 49: 功能名称：手动更新 / 功能描述：手动更新当前传感器的信息 / 使用频率：高，首页用户点击 / 使用人员：App登录人 / 限制条件：需要连接互联网，用户登录 / 输入输出：输入：用户点击 / 输出：服务器返回成功/失败应答，最新终端设备明细信息 / 提供者：曾凡 / 优先级：高：（一个关键的需求）属于系统（产品）主要功能且当前版本中必须实现的 / 获取时间：2014-05-30 / 其他：
- 50: 功能名称：自动更新 / 功能描述：登录后自动更新最新的传感器信息 / 使用频率：高，登录自动执行 / 使用人员：App登录人 / 限制条件：需要连接互联网，用户登录 / 输入输出：输入：当前设备唯一标识 / 输出：服务器返回成功/失败应答，最新终端设备明细信息 / 提供者：曾凡 / 优先级：高：（一个关键的需求）属于系统（产品）主要功能且当前版本中必须实现的 / 获取时间：2014-05-30 / 其他：

| ID | WBS | Task | Type | Duration | Start | Finish | Complete | Remaining | Actual start | Actual finish | Baseline 1 start | Baseline 1 finish | Total slack | Constraint | Resources | Work | Actual work |
| --- | --- | --- | --- | --- | --- | --- | --- | --- | --- | --- | --- | --- | --- | --- | --- | --- | --- |
| 51 | 3.4.3 | **[SH01_03]用户管理** |  | 17d | 2014-06-26 A | 2014-07-18 A | 100% |  |  |  | 2014-06-26 | 2014-07-18 |  |  |  | 81h | 81h |
| 52 | 3.4.3.1 | **[SH01_03_02]用户认证** |  | 17d | 2014-06-26 A | 2014-07-18 A | 100% |  |  |  | 2014-06-26 | 2014-07-18 |  |  |  | 81h | 81h |
| 53 | 3.4.3.1.1 | [SH01_03_02_01] 新建账号 |  | 2.94d | 2014-06-26 A | 2014-06-30 A | 100% |  |  |  | 2014-06-26 | 2014-06-30 |  | finish no earlier than 2014-06-30 | 闫威; 王贺喜 | 2h | 2h |
| 54 | 3.4.3.1.2 | [SH01_03_02_02] 忘记密码 |  | 4.94d | 2014-07-10 A | 2014-07-16 A | 100% |  |  |  | 2014-07-10 | 2014-07-16 |  | start no earlier than 2014-07-10 | 闫威 | 39.5h | 39.5h |
| 55 | 3.4.3.1.3 | [SH01_03_02_03] 修改密码 |  | 7.5h | 2014-07-16 A | 2014-07-16 A | 100% |  |  |  | 2014-07-16 | 2014-07-16 |  | start no earlier than 2014-07-16 | 闫威 | 7.5h | 7.5h |
| 56 | 3.4.3.1.4 | [SH01_03_02_04] 账号登陆 | manual | 16h | 2014-07-17 A | 2014-07-18 A | 100% |  |  |  | 2014-07-17 | 2014-07-18 |  |  | 闫威; 王贺喜 | 32h | 32h |
| 57 | 3.4.4 | **[SH01_04]服务器管理** |  | 4d | 2014-07-07 A | 2014-07-11 | 100% |  |  | 2014-07-07 | 2014-07-07 | 2014-07-11 |  |  |  | 30h | 30h |
| 58 | 3.4.4.1 | **[SH01_04_02]服务器交互** |  | 0.94d | 2014-07-07 A | 2014-07-07 A | 100% |  |  |  | 2014-07-07 | 2014-07-07 |  |  |  | 30h | 30h |
| 59 | 3.4.4.1.1 | [SH01_04_02_01] 推送 |  | 7.5h | 2014-07-07 A | 2014-07-07 A | 100% |  |  |  | 2014-07-07 | 2014-07-07 |  |  | 李静; 李羽浩 | 15h | 15h |
| 60 | 3.4.4.1.2 | [SH01_04_02_01] 报警 |  | 7.5h | 2014-07-07 A | 2014-07-07 A | 100% |  |  |  | 2014-07-07 | 2014-07-07 |  |  | 李静; 李羽浩 | 15h | 15h |
| 61 | 3.4.5 | **[SH01_05]软件功能** |  | 5d | 2014-07-14 A | 2014-07-18 A | 100% |  |  |  | 2014-07-14 | 2014-07-18 |  |  |  | 95h | 95h |
| 62 | 3.4.5.1 | **[SH01_05_01]个性化** |  | 5d | 2014-07-14 A | 2014-07-18 A | 100% |  |  |  | 2014-07-14 | 2014-07-18 |  |  |  | 95h | 95h |
| 63 | 3.4.5.1.1 | [SH01_05_01_02] 用户反馈 |  | 2.94d | 2014-07-14 A | 2014-07-16 A | 100% |  |  |  | 2014-07-14 | 2014-07-16 |  |  | 李静; 李羽浩 | 47h | 47h |
| 64 | 3.4.5.1.2 | [SH01_05_01_03] 讨论区 | manual | 3d | 2014-07-16 A | 2014-07-18 A | 100% |  |  |  | 2014-07-16 | 2014-07-18 |  |  | 李静; 李羽浩 | 48h | 48h |
| 65 | 3.5 | **[SH01]智能家居移动端开发（第二阶段）** |  | 5d | 2014-07-21 A | 2014-07-25 | 92% | 0.42d |  |  | 2014-07-21 | 2014-07-25 |  |  |  | 1038.5h | 940.5h |
| 66 | 3.5.1 | **[SH01_01]设备管理** |  | 2d | 2014-07-21 | 2014-07-22 | 95% | 0.1d | 2014-07-22 |  | 2014-07-21 | 2014-07-22 |  |  |  | 249h | 237h |
| 67 | 3.5.1.1 | **[SH01_01_01]配置设备** |  | 2d | 2014-07-21 | 2014-07-22 | 95% | 0.1d | 2014-07-22 |  | 2014-07-21 | 2014-07-22 |  |  |  | 249h | 237h |
| 68 | 3.5.1.1.1 | [SH01_01_01_02]发现设备 |  | 47.5h | 2014-07-22 A | 2014-07-29 A | 100% |  |  |  | 2014-07-22 | 2014-07-22 |  | finish no earlier than 2014-07-22 | 曾凡; 王贺喜; 李留品 | 142.5h | 142.5h |
| 69 | 3.5.1.1.2 | [SH01_01_01_03]查看已发现设备 |  | 4h | 2014-07-22 A | 2014-07-22 |  | 4h |  |  | 2014-07-22 | 2014-07-22 | 28.44d | start no earlier than 2014-07-22 | 曾凡; 李留品; 王贺喜 | 12h |  |
| 70 | 3.5.1.1.3 | [SH01_01_01_04]删除设备 |  | 31.5h | 2014-07-22 A | 2014-07-25 A | 100% |  |  |  | 2014-07-22 | 2014-07-22 |  | start no earlier than 2014-07-22 | 曾凡; 李留品; 王贺喜 | 94.5h | 94.5h |
| 71 | 3.5.2 | **[SH01_02]数据管理** |  | 5d | 2014-07-21 A | 2014-07-25 | 90% | 0.5d |  |  | 2014-07-21 | 2014-07-25 |  |  |  | 360.5h | 322.5h |
| 72 | 3.5.2.1 | **[SH01_02_01]查看历史信息** |  | 2d | 2014-07-23 | 2014-07-25 | 76% | 0.48d | 2014-07-24 |  | 2014-07-23 | 2014-07-25 |  |  |  | 124.5h | 94.5h |
| 73 | 3.5.2.1.1 | [SH01_02_01_02]查看历史报警信息 |  | 10h | 2014-07-24 A | 2014-07-25 |  | 10h |  |  | 2014-07-23 | 2014-07-24 | 25.69d | start no earlier than 2014-07-23 | 李静; 李留品; 王贺喜 | 30h |  |
| 74 | 3.5.2.1.2 | [SH01_02_01_03]查看历史明细信息 |  | 31.5h | 2014-07-24 A | 2014-07-29 A | 100% |  |  |  | 2014-07-23 | 2014-07-23 |  | start no earlier than 2014-07-23 | 曾凡; 李留品; 王贺喜 | 94.5h | 94.5h |

Notes:
- 53: 功能名称：新建账号 / 功能描述：连接服务端创建账号，建议用户名用邮箱 / 使用频率：低，第一次登录时创建 / 使用人员：App登录人 / 限制条件：需要连接互联网，用户登录 / 输入输出：输入：用户信息 / 输出：服务器返回成功/失败应答 / 提供者：曾凡 / 优先级：高：（一个关键的需求）属于系统（产品）主要功能且当前版本中必须实现的 / 获取时间：2014-05-30 / 其他：
- 54: 功能名称：忘记密码 / 功能描述：忘记密码需要登录服务端通过发送邮箱或者短信验证后重置 / 使用频率：中，长时间不登出App遗忘密码 / 使用人员：App登录人 / 限制条件：需要连接互联网，用户登录 / 输入输出：输入：用户名 / 输出：邮件或密码验证码或地址 / 提供者：曾凡 / 优先级：高：（一个关键的需求）属于系统（产品）主要功能且当前版本中必须实现的 / 获取时间：2014-05-30 / 其他：
- 55: 功能名称：修改密码 / 功能描述：在本地修改密码，修改密码后设置App的登录上下文 / 使用频率：低，有安全意识的人不多 / 使用人员：App登录人 / 限制条件：需要连接互联网，用户登录 / 输入输出：输入：老密码，新密码 / 输出：服务器返回成功/失败应答 / 提供者：曾凡 / 优先级：高：（一个关键的需求）属于系统（产品）主要功能且当前版本中必须实现的 / 获取时间：2014-05-30 / 其他：
- 59: 功能名称：推送 / 功能描述：数据推送功能的开关和功能实现：包括声音选择、报警时段选择等。 / 使用频率：低，第一次登录时创建 / 使用人员：App登录人 / 限制条件：需要连接互联网，用户登录 / 输入输出：输入：是否推送 / 输出：服务器返回成功/失败应答 / 提供者：曾凡 / 优先级：高：（一个关键的需求）属于系统（产品）主要功能且当前版本中必须实现的 / 获取时间：2014-05-30 / 其他：
- 60: 功能名称：报警 / 功能描述：数据推送功能的开关和功能实现：包括声音选择、报警时段选择等。 / 使用频率：低，第一次登录时创建 / 使用人员：App登录人 / 限制条件：需要连接互联网，用户登录 / 输入输出：输入：是否告警 / 输出：服务器返回成功/失败应答 / 提供者：曾凡 / 优先级：高：（一个关键的需求）属于系统（产品）主要功能且当前版本中必须实现的 / 获取时间：2014-05-30 / 其他：
- 63: 功能名称：留言板 / 功能描述：显示服务端提供的web留言反馈页面，可以根据当前登录用户去自动验证登录服务器 / 使用频率：低，基本上没人用 / 使用人员：App登录人 / 限制条件：需要连接互联网，用户登录 / 输入输出：输入：用户留言 / 输出：服务端页面更新 / 提供者：曾凡 / 优先级：低：（功能或质量上的增强）如果资源允许的话，实现这些需求会使系统（产品）更完美 / 获取时间：2014-05-30 / 其他：
- 68: 功能名称：发现设备 / 功能描述：自动发现局域网内的智能设备 / 使用频率：低，第一次登陆App、第一次连接终端设备或用户非常态调用 / 使用人员：App登录人 / 限制条件：需要连接局域网，用户登录 / 输入输出：输入：当前手机WIFI的SSID密码 / 输出：局域网内设备的连接信息 / 提供者：曾凡 / 优先级：高：（一个关键的需求）属于系统（产品）主要功能且当前版本中必须实现的。 / 获取时间：2014-05-30 / 其他：
- 69: 功能名称：查看已发现设备 / 功能描述：发现设备后可以查看已发现的设备，以列表或者分散的图片显示 / 使用频率：低，第一次登陆App、第一次连接终端设备或用户非常态调用 / 使用人员：App登录人 / 限制条件：需要连接局域网，用户登录 / 输入输出：输入：局域网内设备的连接信息 / 输出：设备列表 / 提供者：曾凡 / 优先级：高：（一个关键的需求）属于系统（产品）主要功能且当前版本中必须实现的。 / 获取时间：2014-05-30 / 其他：
- 70: 功能名称：查看已发现设备 / 功能描述：用户添加已发现的设备，同时也可以删除已添加的设备，需要联网激活设备和接受服务端应答确认信息 / 使用频率：低，第一次登陆App、第一次连接终端设备或用户非常态调用 / 使用人员：App登录人 / 限制条件：需要连接互联网，用户登录 / 输入输出：输入：设备列表 / 输出：服务器返回成功/失败应答和最新设备列表 / 提供者：曾凡 / 优先级：高：（一个关键的需求）属于系统（产品）主要功能且当前版本中必须实现的。 / 获取时间：2014-05-30 / 其他：
- 73: 功能名称：控制设备开关 / 功能描述：用户可以查看设备的历史报警信息 / 使用频率：高，主页显示 / 使用人员：App登录人 / 限制条件：需要连接互联网，用户登录 / 输入输出：输入：当前设备唯一标识 / 输出：服务器返回成功/失败应答，历史报警列表 / 提供者：曾凡 / 优先级：高：（一个关键的需求）属于系统（产品）主要功能且当前版本中必须实现的 / 获取时间：2014-05-30 / 其他：
- 74: 功能名称：查看历史明细信息 / 功能描述：用户可以查看设备的历史明细信息 / 使用频率：高，主页显示 / 使用人员：App登录人 / 限制条件：需要连接互联网，用户登录 / 输入输出：输入：当前设备唯一标识 / 输出：服务器返回成功/失败应答，历史明细列表 / 提供者：曾凡 / 优先级：高：（一个关键的需求）属于系统（产品）主要功能且当前版本中必须实现的 / 获取时间：2014-05-30 / 其他：

| ID | WBS | Task | Type | Duration | Start | Finish | Complete | Remaining | Actual start | Actual finish | Baseline 1 start | Baseline 1 finish | Total slack | Constraint | Resources | Work | Actual work |
| --- | --- | --- | --- | --- | --- | --- | --- | --- | --- | --- | --- | --- | --- | --- | --- | --- | --- |
| 75 | 3.5.2.2 | **[SH01_02_02]更新显示传感器明细** |  | 3d | 2014-07-23 A | 2014-07-25 A | 100% |  |  |  | 2014-07-23 | 2014-07-25 |  |  |  | 117h | 117h |
| 76 | 3.5.2.2.1 | [SH01_02_02_01]手动更新 |  | 2.94d | 2014-07-23 A | 2014-07-25 A | 100% |  |  |  | 2014-07-23 | 2014-07-25 |  | start no earlier than 2014-07-23 | 李留品; 闫威; 王贺喜 | 70.5h | 70.5h |
| 77 | 3.5.2.2.2 | [SH01_02_02_02]自动更新 |  | 15.5h | 2014-07-24 A | 2014-07-25 A | 100% |  |  |  | 2014-07-24 | 2014-07-24 |  | finish no earlier than 2014-07-24 | 闫威; 李留品; 王贺喜 | 46.5h | 46.5h |
| 78 | 3.5.2.3 | **[SH01_02_04]分享（微博、微信）** |  | 1d | 2014-07-23 | 2014-07-23 | 93% | 0.07d | 2014-07-21 |  | 2014-07-23 | 2014-07-23 |  |  |  | 119h | 111h |
| 79 | 3.5.2.3.1 | [SH01_02_04_01] 分享选中的历史 |  | 55.5h | 2014-07-21 A | 2014-07-29 A | 100% |  |  |  | 2014-07-21 | 2014-07-21 |  | finish no earlier than 2014-07-21 | 李静; 李留品 | 111h | 111h |
| 80 | 3.5.2.3.2 | [SH01_02_04_03] 分享选中的传感器实时数据 |  | 4h | 2014-07-21 A | 2014-07-21 |  | 4h |  |  | 2014-07-21 | 2014-07-21 | 29.44d | start no earlier than 2014-07-21 | 李静; 李留品 | 8h |  |
| 81 | 3.5.3 | **[SH01_03]用户管理** |  | 3d | 2014-07-21 A | 2014-07-23 | 91% | 0.27d |  |  | 2014-07-21 | 2014-07-23 |  |  |  | 180h | 160h |
| 82 | 3.5.3.1 | **[SH01_03_02]用户认证** |  | 3d | 2014-07-21 A | 2014-07-23 | 91% | 0.27d |  |  | 2014-07-21 | 2014-07-23 |  |  |  | 180h | 160h |
| 83 | 3.5.3.1.1 | [SH01_03_02_01] 新建账号 |  | 39.5h | 2014-07-21 A | 2014-07-25 A | 100% |  |  |  | 2014-07-21 | 2014-07-21 |  | start no earlier than 2014-07-21 | 李留品; 闫威 | 79h | 79h |
| 84 | 3.5.3.1.2 | [SH01_03_02_02] 忘记密码 |  | 4h | 2014-07-22 A | 2014-07-22 |  | 4h |  |  | 2014-07-22 | 2014-07-22 | 28.44d | start no earlier than 2014-07-22 | 李留品; 闫威 | 8h |  |
| 85 | 3.5.3.1.3 | [SH01_03_02_03] 修改密码 |  | 4h | 2014-07-22 A | 2014-07-22 |  | 4h |  |  | 2014-07-22 | 2014-07-22 | 28.44d | start no earlier than 2014-07-22 | 李留品; 闫威; 王贺喜 | 12h |  |
| 86 | 3.5.3.1.4 | [SH01_03_02_04] 账号登陆 | manual | 40h | 2014-07-22 A | 2014-07-28 A | 100% |  |  |  | 2014-07-23 | 2014-07-23 |  |  | 李留品; 闫威 | 81h | 81h |
| 87 | 3.5.4 | **[SH01_05]软件功能** |  | 3d | 2014-07-23 | 2014-07-25 | 92% | 0.25d | 2014-07-21 |  | 2014-07-23 | 2014-07-25 |  |  |  | 249h | 221h |
| 88 | 3.5.4.1 | **[SH01_05_01]个性化** |  | 2d | 2014-07-21 | 2014-07-22 | 100% |  | 2014-07-22 | 2014-07-23 | 2014-07-21 | 2014-07-22 |  |  |  | 63h | 63h |
| 89 | 3.5.4.1.1 | [SH01_05_01_02] 用户反馈 |  | 15.5h | 2014-07-22 A | 2014-07-23 A | 100% |  |  |  | 2014-07-22 | 2014-07-22 |  | finish no earlier than 2014-07-22 | 李静; 李留品 | 31h | 31h |
| 90 | 3.5.4.1.2 | [SH01_05_01_03] 讨论区 | manual | 16h | 2014-07-22 A | 2014-07-23 A | 100% |  |  |  | 2014-07-22 | 2014-07-22 |  |  | 李静; 李留品 | 32h | 32h |
| 91 | 3.5.4.2 | **[SH01_05_02]通用功能** |  | 2d | 2014-07-24 | 2014-07-25 | 89% | 0.22d | 2014-07-21 |  | 2014-07-24 | 2014-07-25 |  |  |  | 186h | 158h |
| 92 | 3.5.4.2.1 | [SH01_05_02_01] 关于 |  | 15.5h | 2014-07-24 A | 2014-07-25 A | 100% |  |  |  | 2014-07-24 | 2014-07-24 |  | start no earlier than 2014-07-24 | 李静; 李留品 | 31h | 31h |
| 93 | 3.5.4.2.2 | [SH01_05_02_02] 帮助 |  | 2h | 2014-07-24 A | 2014-07-24 |  | 2h |  |  | 2014-07-24 | 2014-07-24 | 26.69d | start no earlier than 2014-07-24 | 李静; 李留品 | 4h |  |
| 94 | 3.5.4.2.3 | [SH01_05_02_03] 开发者名单 |  | 7.5h | 2014-07-25 A | 2014-07-25 A | 100% |  |  |  | 2014-07-24 | 2014-07-24 |  | start no earlier than 2014-07-24 | 李静; 李留品 | 15h | 15h |
| 95 | 3.5.4.2.4 | [SH01_05_02_04] 退出 | manual | 56h | 2014-07-21 A | 2014-07-29 A | 100% |  |  |  | 2014-07-24 | 2014-07-25 |  | finish no earlier than 2014-07-24 | 李留品; 闫威 | 112h | 112h |
| 96 | 3.5.4.2.5 | [SH01_05_02_05] 版本更新 | manual | 1d | 2014-07-21 A | 2014-07-22 |  | 1d |  |  | 2014-07-25 | 2014-07-25 |  |  | 闫威; 李留品; 王贺喜 | 24h |  |
| 97 | 4 | **测试** |  | 45d | 2014-06-25 | 2014-08-26 |  |  |  |  | 2014-06-25 | 2014-08-26 |  |  |  | 408h |  |
| 98 | 4.1 | 制定测试计划 | manual | 1d | 2014-06-25 | 2014-06-26 |  |  |  |  | 2014-06-25 | 2014-06-26 |  |  |  |  |  |
| 99 | 4.2 | 测试用例设计 | manual | 6d | 2014-06-27 | 2014-07-04 |  |  |  |  | 2014-06-27 | 2014-07-04 |  |  |  |  |  |
| 100 | 4.3 | 测试用例评审、完善 | manual | 2d | 2014-07-04 | 2014-07-07 |  |  |  |  | 2014-07-04 | 2014-07-07 |  |  |  |  |  |
| 101 | 4.4 | 第一轮测试 | manual | 4d | 2014-07-21 | 2014-07-25 |  |  |  |  | 2014-07-21 | 2014-07-25 |  |  | 全体人员 | 32h |  |
| 102 | 4.5 | bug修改 | manual | 5d | 2014-07-21 | 2014-07-25 |  |  |  |  | 2014-07-21 | 2014-07-25 |  |  | 全体人员 | 40h |  |
| 103 | 4.6 | 第二轮测试 | manual | 5d | 2014-07-28 | 2014-08-01 |  |  |  |  | 2014-07-28 | 2014-08-01 |  |  | 全体人员 | 40h |  |
| 104 | 4.7 | bug修改 | manual | 5d | 2014-07-28 | 2014-08-01 |  |  |  |  | 2014-07-28 | 2014-08-01 |  |  | 全体人员 | 40h |  |
| 105 | 4.8 | 第三轮测试 | manual | 5d | 2014-08-05 | 2014-08-12 |  |  |  |  | 2014-08-05 | 2014-08-12 |  |  | 全体人员 | 40h |  |
| 106 | 4.9 | bug修改 | manual | 5d | 2014-08-05 | 2014-08-12 |  |  |  |  | 2014-08-05 | 2014-08-12 |  |  | 全体人员 | 40h |  |
| 107 | 4.10 | 测试报告&用户手册 | manual | 3d | 2014-08-21 | 2014-08-26 |  |  |  |  | 2014-08-21 | 2014-08-26 |  |  | 曾凡; 苌帅 | 48h |  |
| 108 | 4.11 | 公测 | manual | 8d | 2014-08-08 | 2014-08-20 |  |  |  |  | 2014-08-08 | 2014-08-20 |  |  | 苌帅; 李留品 | 128h |  |
| 109 | 5 | 验收 | manual | 1d | 2014-08-26 | 2014-08-27 |  |  |  |  | 2014-08-26 | 2014-08-27 |  |  | 曾凡; 苌帅 | 16h |  |
| 110 | 6 | 发布维护 |  | 7.94d | 2014-08-19 | 2014-08-28 |  |  |  |  | 2014-08-19 | 2014-08-28 | 1d | finish no earlier than 2014-08-28 | 曾凡; 苌帅 | 127h |  |
| 111 | 7 | 结项验收 | manual | 1d | 2014-08-29 | 2014-08-29 |  |  |  |  | 2014-08-29 | 2014-08-29 |  |  | 曾凡; 苌帅 | 16h |  |
| 112 | 8 | 后续维护升级 | manual | 1d? | 2014-06-03 | 2014-06-03 |  |  |  |  |  |  |  |  |  |  |  |

Notes:
- 76: 功能名称：手动更新 / 功能描述：手动更新当前传感器的信息 / 使用频率：高，首页用户点击 / 使用人员：App登录人 / 限制条件：需要连接互联网，用户登录 / 输入输出：输入：用户点击 / 输出：服务器返回成功/失败应答，最新终端设备明细信息 / 提供者：曾凡 / 优先级：高：（一个关键的需求）属于系统（产品）主要功能且当前版本中必须实现的 / 获取时间：2014-05-30 / 其他：
- 77: 功能名称：自动更新 / 功能描述：登录后自动更新最新的传感器信息 / 使用频率：高，登录自动执行 / 使用人员：App登录人 / 限制条件：需要连接互联网，用户登录 / 输入输出：输入：当前设备唯一标识 / 输出：服务器返回成功/失败应答，最新终端设备明细信息 / 提供者：曾凡 / 优先级：高：（一个关键的需求）属于系统（产品）主要功能且当前版本中必须实现的 / 获取时间：2014-05-30 / 其他：
- 79: 功能名称：分享选中的历史 / 功能描述：分享选中的历史页面的图片信息 / 使用频率：低，基本没人会去分享 / 使用人员：App登录人 / 限制条件：需要连接互联网，用户登录 / 输入输出：输入：分享请求 / 输出：请求App的应答 / 提供者：曾凡 / 优先级：低：（功能或质量上的增强）如果资源允许的话，实现这些需求会使系统（产品）更完美。 / 获取时间：2014-05-30 / 其他：
- 80: 功能名称：分享选中的传感器 / 功能描述：分享本地的传感器信息 / 使用频率：低，基本没人会去分享 / 使用人员：App登录人 / 限制条件：需要连接互联网，用户登录 / 输入输出：输入：分享请求 / 输出：请求App的应答 / 提供者：曾凡 / 优先级：低：（功能或质量上的增强）如果资源允许的话，实现这些需求会使系统（产品）更完美。 / 获取时间：2014-05-30 / 其他：
- 83: 功能名称：新建账号 / 功能描述：连接服务端创建账号，建议用户名用邮箱 / 使用频率：低，第一次登录时创建 / 使用人员：App登录人 / 限制条件：需要连接互联网，用户登录 / 输入输出：输入：用户信息 / 输出：服务器返回成功/失败应答 / 提供者：曾凡 / 优先级：高：（一个关键的需求）属于系统（产品）主要功能且当前版本中必须实现的 / 获取时间：2014-05-30 / 其他：
- 84: 功能名称：忘记密码 / 功能描述：忘记密码需要登录服务端通过发送邮箱或者短信验证后重置 / 使用频率：中，长时间不登出App遗忘密码 / 使用人员：App登录人 / 限制条件：需要连接互联网，用户登录 / 输入输出：输入：用户名 / 输出：邮件或密码验证码或地址 / 提供者：曾凡 / 优先级：高：（一个关键的需求）属于系统（产品）主要功能且当前版本中必须实现的 / 获取时间：2014-05-30 / 其他：
- 85: 功能名称：修改密码 / 功能描述：在本地修改密码，修改密码后设置App的登录上下文 / 使用频率：低，有安全意识的人不多 / 使用人员：App登录人 / 限制条件：需要连接互联网，用户登录 / 输入输出：输入：老密码，新密码 / 输出：服务器返回成功/失败应答 / 提供者：曾凡 / 优先级：高：（一个关键的需求）属于系统（产品）主要功能且当前版本中必须实现的 / 获取时间：2014-05-30 / 其他：
- 89: 功能名称：留言板 / 功能描述：显示服务端提供的web留言反馈页面，可以根据当前登录用户去自动验证登录服务器 / 使用频率：低，基本上没人用 / 使用人员：App登录人 / 限制条件：需要连接互联网，用户登录 / 输入输出：输入：用户留言 / 输出：服务端页面更新 / 提供者：曾凡 / 优先级：低：（功能或质量上的增强）如果资源允许的话，实现这些需求会使系统（产品）更完美 / 获取时间：2014-05-30 / 其他：
- 92: 功能名称：关于 / 功能描述：显示软件全名、公司、版本号等信息 / 使用频率：中，查看的人不多 / 使用人员：App登录人 / 限制条件：用户登录 / 输入输出：输入：用户点击 / 输出：关于信息 / 提供者：曾凡 / 优先级：中：（支持必要的功能）最终所需要的，但如果有必要的话，可以延迟到下一个版本。 / 获取时间：2014-05-30 / 其他：
- 93: 功能名称：帮助 / 功能描述：显示帮助信息 / 使用频率：中，对仪表不熟悉的人可以选 / 使用人员：App登录人 / 限制条件：/ 输入输出：输入：用户点击 / 输出：帮助列表/图片 / 提供者：曾凡 / 优先级：中：（支持必要的功能）最终所需要的，但如果有必要的话，可以延迟到下一个版本。 / 获取时间：2014-05-30 / 其他：
- 94: 功能名称：开发者名单 / 功能描述：显示开发者名单 / 使用频率：低，用户换一次就完了 / 使用人员：App登录人 / 限制条件：/ 输入输出：输入：用户点击 / 输出：开发者名单列表/图片 / 提供者：曾凡 / 优先级：中：（支持必要的功能）最终所需要的，但如果有必要的话，可以延迟到下一个版本。 / 获取时间：2014-05-30 / 其他：
- 95: 功能名称：退出 / 功能描述：退出当前的登录账户并返回登录页面 / 使用频率：低，基本没人去退出 / 使用人员：App登录人 / 限制条件：用户登录 / 输入输出：输入：用户点击 / 输出：跳转主页面，退出登录 / 提供者：曾凡 / 优先级：高：（一个关键的需求）属于系统（产品）主要功能且当前版本中必须实现的。 / 获取时间：2014-05-30 / 其他：
