# 威豆项目

Schedule from MS Project, 2014-10-10 to 2014-12-23.

## Calendars

- 标准: Mon-Fri 08:00-12:00, 13:00-17:00; Sat-Sun off.

## Resources

| Resource |
| --- |
| 管理人员 |
| 项目经理 |
| 分析人员 |
| 开发人员 |
| 测试人员 |
| 讲师 |
| 技术联络人员 |
| 部署小组 |
| 曾凡 |
| 张世宏 |
| 金鑫 |
| 王书潜 |
| 闫威 |
| 苌帅 |
| 李留品 |
| 曾 |
| 赵帅 |
| 高峰 |

## Schedule

| ID | WBS | Task | Type | Duration | Start | Finish | Predecessors | Baseline start | Baseline finish | Baseline duration | Total slack | Free slack | Constraint | Resources | Work |
| --- | --- | --- | --- | --- | --- | --- | --- | --- | --- | --- | --- | --- | --- | --- | --- |
| 1 | 1 | **项目范围规划** |  | 3.5d | 2014-10-28 | 2014-10-31 |  | 2014-10-28 | 2014-10-31 | 0d? |  |  |  |  | 24h |
| 2 | 1.1 | 获得项目所需资金 |  | 1d | 2014-10-28 | 2014-10-28 |  | 2014-10-28 | 2014-10-29 | 0d? | 0.5d | 0d |  | 管理人员 | 8h |
| 3 | 1.2 | 定义预备资源 |  | 1d | 2014-10-29 | 2014-10-29 | 2 | 2014-10-29 | 2014-10-30 | 0d? | 0.5d | 0d |  | 曾凡 | 8h |
| 4 | 1.3 | 获得核心资源 |  | 1d | 2014-10-30 | 2014-10-30 | 3 | 2014-10-30 | 2014-10-31 | 0d? | 0.5d | 0d |  | 曾凡 | 8h |
| 5 | 1.4 | 完成项目范围规划 | milestone | 0d | 2014-10-30 | 2014-10-30 | 4 | 2014-10-31 | 2014-10-31 | 0d? | 0.5d |  |  | 曾凡 |  |
| 6 | 2 | **需求阶段** |  | 14.5d | 2014-10-31 | 2014-11-20 |  | 2014-10-31 | 2014-11-20 | 0d? |  |  |  |  | 38h |
| 7 | 2.1 | 需求调研方案确定 |  | 1d | 2014-10-24 | 2014-10-24 |  | 2014-10-24 | 2014-10-24 | 0d? | 42.75d | 2d | start no earlier than 2014-10-24 | 高峰 | 8h |
| 8 | 2.2 | 需求调研方案评审 |  | 0.25d | 2014-10-29 | 2014-10-29 | 7 | 2014-10-29 | 2014-10-29 | 0d? | 40.75d |  | start no earlier than 2014-10-29 | 张世宏; 曾凡; 金鑫; 王书潜 | 8h |
| 9 | 2.3 | 需求调研 |  | 0.25d | 2014-10-28 | 2014-10-28 |  | 2014-10-28 | 2014-10-28 | 0d? | 41.75d |  | start no earlier than 2014-10-28 | 曾凡 | 2h |
| 10 | 2.4 | 需求整理 |  | 0.25d | 2014-10-28 | 2014-10-28 |  | 2014-10-28 | 2014-10-28 | 0d? | 41.25d | 0d | start no earlier than 2014-10-28 | 曾凡 | 2h |
| 11 | 2.5 | 需求说明书编制 |  | 0.25d | 2014-10-28 | 2014-10-28 | 10 | 2014-10-28 | 2014-10-28 | 0d? | 41.25d | 0.5d | start no earlier than 2014-10-28 | 曾凡 | 2h |
| 12 | 2.6 | 需求说明书评审 |  | 0.25d | 2014-10-29 | 2014-10-29 | 11 | 2014-10-29 | 2014-10-29 | 0d? | 40.75d |  | start no earlier than 2014-10-29 | 闫威; 曾凡; 苌帅; 李留品 | 8h |
| 13 | 2.7 | 软件需求规格说明书评审 |  | 0.25d | 2014-10-29 | 2014-10-29 |  | 2014-10-29 | 2014-10-29 | 0d? | 40.75d |  | start no earlier than 2014-10-29 | 闫威; 曾凡; 苌帅; 李留品 | 8h |
| 14 | 3 | **设计阶段** |  | 12.5d | 2014-10-13 | 2014-10-29 |  | 2014-10-13 | 2014-10-29 | 0d? | 38d |  |  |  | 80h |
| 15 | 3.1 | 详细设计评审 |  | 1d | 2014-10-28 | 2014-10-28 |  | 2014-10-28 | 2014-10-28 | 0d? | 41d |  | finish no earlier than 2014-10-28 | 李留品; 曾凡; 苌帅; 闫威 | 32h |
| 16 | 3.2 | UI设计 |  | 0.5d | 2014-10-13 | 2014-10-13 |  | 2014-10-13 | 2014-10-13 | 0d? | 52d |  | finish no earlier than 2014-10-13 | 曾凡; 赵帅 | 8h |
| 17 | 3.3 | UI设计评审 |  | 8h | 2014-10-27 | 2014-10-27 |  | 2014-10-27 | 2014-10-27 | 0d? | 37.25d | 1d | finish no earlier than 2014-10-27 | 曾凡; 金鑫; 王书潜; 赵帅 | 32h |
| 18 | 3.4 | 数据库设计 |  | 1d | 2014-10-29 | 2014-10-29 | 17 | 2014-10-29 | 2014-10-29 | 0d? | 40d |  | finish no earlier than 2014-10-29 | 闫威 | 8h |
| 19 | 4 | **编码阶段** |  | 23d | 2014-10-10 | 2014-11-11 |  | 2014-10-10 | 2014-11-10 | 0d? | 0d |  |  |  | 896h |
| 20 | 4.1 | **单机版APP端开发** |  | 22d | 2014-10-10 | 2014-11-10 |  | 2014-10-10 | 2014-11-10 | 0d |  |  |  |  | 192h |
| 21 | 4.1.1 | [WD_01_01]检测气体 |  | 24h | 2014-10-10 | 2014-10-14 |  | 2014-10-10 | 2014-10-14 | 0d | 51d |  | finish no earlier than 2014-10-14 | 曾凡 | 24h |
| 22 | 4.1.2 | [WD_01_01_01]检测单片机与APP连接 |  | 32h | 2014-10-14 | 2014-10-17 |  | 2014-10-14 | 2014-10-17 | 0d | 48d |  | finish no earlier than 2014-10-17 | 曾凡 | 32h |
| 23 | 4.1.3 | [WD_01_01_02]MIC口接受并解调传感器值信号 |  | 24h | 2014-10-17 | 2014-10-21 |  | 2014-10-17 | 2014-10-21 | 0d | 46d |  | finish no earlier than 2014-10-21 | 曾凡 | 24h |
| 24 | 4.1.4 | [WD_01_02]记录历史信息 |  | 16h | 2014-10-21 | 2014-10-22 |  | 2014-10-21 | 2014-10-22 | 0d | 45d |  | finish no earlier than 2014-10-22 | 曾凡 | 16h |
| 25 | 4.1.5 | [WD_01_05]比赛 |  | 16h | 2014-10-22 | 2014-10-23 |  | 2014-10-22 | 2014-10-23 | 0d | 44d |  | finish no earlier than 2014-10-23 | 曾凡 | 16h |

| ID | WBS | Task | Duration | Start | Finish | Predecessors | Baseline start | Baseline finish | Baseline duration | Total slack | Free slack | Constraint | Resources | Work |
| --- | --- | --- | --- | --- | --- | --- | --- | --- | --- | --- | --- | --- | --- | --- |
| 26 | 4.1.6 | **[WD_01_04]分享** | 2d | 2014-10-28 | 2014-10-29 |  | 2014-10-28 | 2014-10-29 | 0d |  |  |  |  | 48h |
| 27 | 4.1.6.1 | View层页面 | 16h | 2014-10-23 | 2014-10-24 |  |  |  |  | 43d |  | finish no earlier than 2014-10-24 | 曾凡 | 16h |
| 28 | 4.1.6.2 | 提交到开放平台，分配接口 | 16h | 2014-10-28 | 2014-10-29 |  |  |  |  | 40d |  | finish no earlier than 2014-10-29 | 闫威 | 16h |
| 29 | 4.1.6.3 | 在微信和朋友圈确认分析内容 | 16h | 2014-10-28 | 2014-10-29 |  |  |  |  | 40d |  | finish no earlier than 2014-10-29 | 闫威 | 16h |
| 30 | 4.1.7 | 引导页内容确定与实现 | 16h | 2014-10-28 | 2014-10-29 |  | 2014-10-28 | 2014-10-29 | 0d | 40d |  | finish no earlier than 2014-10-29 | 曾凡; 赵帅 | 32h |
| 31 | 4.2 | **联网版服务端开发** | 11d | 2014-10-28 | 2014-11-11 |  | 2014-10-28 | 2014-10-30 | 0d |  |  |  |  | 528h |
| 32 | 4.2.1 | 服务器部署 | 88h | 2014-10-28 | 2014-11-11 |  | 2014-10-28 | 2014-10-30 | 0d | 31d |  | start no earlier than 2014-10-28 | 闫威; 苌帅 | 176h |
| 33 | 4.2.2 | 消息推送设置 | 88h | 2014-10-28 | 2014-11-11 |  | 2014-10-28 | 2014-10-30 | 0d | 31d |  | start no earlier than 2014-10-28 | 闫威 | 88h |
| 34 | 4.2.3 | [WD_02_03]分享静态页面 | 88h | 2014-10-28 | 2014-11-11 |  | 2014-10-28 | 2014-10-30 | 0d | 31d |  | start no earlier than 2014-10-28 | 闫威 | 88h |
| 35 | 4.2.4 | [WD_02_01]记录历史信息功能移植（从智能家居项目） | 88h | 2014-10-28 | 2014-11-11 |  | 2014-10-30 | 2014-10-30 | 0d | 31d |  | start no earlier than 2014-10-28 | 闫威 | 88h |
| 36 | 4.2.5 | [WD_02_02]全国排名功能移植（从智能家居项目） | 88h | 2014-10-28 | 2014-11-11 |  | 2014-10-30 | 2014-10-30 | 0d | 31d |  | start no earlier than 2014-10-28 | 闫威 | 88h |
| 37 | 4.3 | 国内标准手机和国际标准手机测试（MIC口） | 88h | 2014-10-28 | 2014-11-11 |  | 2014-10-31 | 2014-11-07 | 0d | 31d |  | start no earlier than 2014-10-28 | 曾凡 | 88h |
| 38 | 4.4 | 代码评审 | 11d | 2014-10-28 | 2014-11-11 |  | 2014-10-10 | 2014-11-10 | 0d? | 31d |  | start no earlier than 2014-10-28 | 曾凡 | 88h |
| 39 | 5 | **测试阶段** | 13d | 2014-10-24 | 2014-11-11 |  | 2014-11-11 | 2014-12-24 | 0d? |  |  |  |  | 200h |
| 40 | 5.1 | 测试计划编制 | 1d | 2014-10-28 | 2014-10-28 |  | 2014-10-28 | 2014-10-29 | 0d? | 41d |  | finish no earlier than 2014-10-28 | 李留品; 苌帅 | 16h |
| 41 | 5.2 | 测试计划评审 | 1d | 2014-10-29 | 2014-10-29 | 18 | 2014-10-29 | 2014-12-08 | 0d? | 40d |  | finish no earlier than 2014-10-29 | 李留品; 曾凡; 苌帅; 闫威 | 32h |
| 42 | 5.3 | 编写测试用例 | 1d? | 2014-10-29 | 2014-10-29 |  | 2014-10-29 |  | 0d | 39d | 0d | start no earlier than 2014-10-29 | 李留品 | 8h |
| 43 | 5.4 | 测试单机版（功能性、易用性、兼容性） | 8d? | 2014-10-30 | 2014-11-10 | 42 | 2014-11-10 | 2014-10-24 | 0d? | 32d |  | finish no earlier than 2014-11-10 | 李留品 | 64h |
| 44 | 5.5 | 测试联网版（功能性、易用性、兼容性） | 8d | 2014-10-30 | 2014-11-10 | 40 | 2014-11-10 | 2014-11-26 | 0d? | 32d |  | finish no earlier than 2014-11-10 | 李留品 | 64h |
| 45 | 5.6 | 编写测试总结报告 | 1d? | 2014-11-11 | 2014-11-11 |  | 2014-11-11 |  | 0d | 31d |  | finish no earlier than 2014-11-11 | 李留品 | 8h |
| 46 | 5.7 | 编写用户操作说明书 | 1d? | 2014-11-11 | 2014-11-11 |  | 2014-11-11 |  | 0d | 31d |  | finish no earlier than 2014-11-11 | 李留品 | 8h |
| 47 | 6 | **验收阶段** | 26d | 2014-11-10 | 2014-12-15 |  | 2014-11-10 | 2014-12-15 | 0d? | 5d |  |  | 金鑫 | 240h |
| 48 | 6.1 | 验收任务1 | 1d | 2014-11-10 | 2014-11-10 |  | 2014-11-10 | 2014-11-10 | 0d? | 32d |  | finish no earlier than 2014-11-10 | 曾凡; 金鑫 | 16h |
| 49 | 6.2 | 验收任务2 | 1d | 2014-12-15 | 2014-12-15 |  | 2014-12-15 | 2014-12-15 | 0d? | 7d |  | finish no earlier than 2014-12-15 | 金鑫; 曾凡 | 16h |

| ID | WBS | Task | Type | Duration | Start | Finish | Baseline start | Baseline finish | Baseline duration | Total slack | Resources |
| --- | --- | --- | --- | --- | --- | --- | --- | --- | --- | --- | --- |
| 50 | 7 | **项目结项** |  | 0d | 2014-12-23 | 2014-12-23 | 2014-12-23 | 2014-12-23 | 0d? |  | 金鑫 |
| 51 | 7.1 | 项目结项 | milestone | 0d | 2014-12-23 | 2014-12-23 | 2014-12-23 | 2014-12-23 | 0d? | 0d | 金鑫 |
